# Cronograma Elora - V3 Reajuste de Datas e Horas

Schedule from MS Project, 2026-04-29 to 2026-07-14, status date 2026-06-08, costs in $, A marks actual dates.
Elora

## Calendars

- Standard: Mon-Fri 08:00-12:00, 13:00-17:00; Sat-Sun off.

## Resources

| Resource | Rate |
| --- | --- |
| Gerente de Projeto | 300 |
| Analista 01 | 75 |
| Analista 02 | 75 |
| Analista 03 | 75 |
| Dev 01 | 80 |
| Dev 02 | 80 |
| Dev 03 | 80 |
| QA 01 | 55 |
| QA 02 | 55 |
| Integrador | 47 |
| Analista 04 | 75 |
| Dev 04 | 80 |
| QA 03 | 55 |
| Integrador 02 | 47 |
| Integrador 03 | 47 |
| Analista 05 | 75 |
| Analista 06 | 75 |
| Analista 07 | 75 |
| Dev 05 | 80 |
| Dev 06 | 80 |
| Dev 07 | 80 |
| QA 04 | 55 |
| QA 05 | 55 |
| QA 06 | 55 |
| QA 07 | 55 |
| Integrador 04 | 47 |
| Analista 08 | 75 |
| Analista 09 | 75 |
| Analista 10 | 75 |
| Analista 11 | 75 |
| Analista 12 | 75 |
| Dev 08 | 80 |
| Dev 09 | 80 |
| Dev 10 | 80 |
| Dev 11 | 80 |
| Dev 12 | 80 |
| Dev 13 | 80 |
| Dev 14 | 80 |
| Dev 15 | 80 |
| Dev 16 | 80 |
| QA 13 | 55 |
| QA 12 | 55 |
| QA 11 | 55 |
| QA 08 | 55 |
| QA 09 | 55 |
| QA 10 | 55 |
| Analista 13 | 75 |
| Analista 14 | 75 |
| Analista 15 | 75 |
| Analista 23 | 75 |
| Analista 16 | 75 |
| Analista 22 | 75 |
| Analista 21 | 75 |
| Analista 18 | 75 |
| Analista 20 | 75 |
| Analista 17 | 75 |
| Analista 19 | 75 |
| Analista 24 | 75 |
| Analista 25 | 75 |
| Dev 17 | 80 |
| Dev 20 | 80 |
| Dev 19 | 80 |
| Dev 18 | 80 |
| QA 14 | 55 |
| QA 21 | 55 |
| QA 20 | 55 |
| QA 17 | 55 |
| QA 19 | 55 |
| QA 15 | 55 |
| QA 18 | 55 |
| QA 16 | 55 |
| Dev 22 | 80 |
| Dev 21 | 80 |
| Dev 23 | 80 |
| Dev 24 | 80 |
| Dev 25 | 80 |
| QA 22 | 55 |
| QA 23 | 55 |
| QA 24 | 55 |
| QA 25 | 55 |
| QA03 |  |
| QA1 |  |
| QA08 |  |

## Schedule

| ID | WBS | Task | Duration | Start | Finish | Predecessors | Complete | Remaining | Total slack | Free slack | Constraint | Resources | Work | Actual work | Cost | Baseline cost | Actual cost | Status EVM | Text1 | Fase | Responsável |
| --- | --- | --- | --- | --- | --- | --- | --- | --- | --- | --- | --- | --- | --- | --- | --- | --- | --- | --- | --- | --- | --- |
| 1 | 1 | **Projeto Elora** | 432h | 2026-04-29 09:00 A | 2026-07-14 09:00 |  | 49% | 218.29h | 0d |  |  |  | 1595h | 793h | 117,173 | 24,197.5 | 60,099 | Em andamento |  |  |  |
| 2 | 1.1 | **Iteração 01** | 143h | 2026-04-29 09:00 A | 2026-05-22 18:00 |  | 69% | 44.62h | 36.12d |  | start no earlier than 2026-04-29 09:00 |  | 391h | 269h | 28,329 | 8,105 | 19,399 | Concluída | 1.1 |  |  |
| 3 | 1.1.1 | **Modelagem** | 36h | 2026-04-29 09:00 A | 2026-05-05 14:00 |  | 61% | 14h | 49.5d |  |  |  | 144h | 88h | 10,800 | 2,040 | 6,600 | Concluída | 1.1.1 | Modelagem |  |
| 4 | 1.1.1.1 | **"Modelo de análise"** | 36h | 2026-04-29 09:00 A | 2026-05-05 14:00 A |  | 100% |  |  |  |  |  | 36h | 36h | 2,700 | 488.75 | 2,700 | Concluída | 1.1.1.1 | Modelagem |  |
| 5 | 1.1.1.1.1 | Elaborar EL-UCD_001 - Diagrama de Caso de Uso de "Modelo de análise" | 8h | 2026-04-29 09:00 A | 2026-04-30 09:00 A |  | 100% |  |  |  |  | Analista 01 | 8h | 8h | 600 | 127.5 | 600 | Concluída | 1.1.1.1.1 | Modelagem | Analista 01 |
| 6 | 1.1.1.1.2 | Redigir EL-UCE_001 - Especificação de Caso de Uso de "Modelo de análise" | 8h | 2026-04-30 09:00 A | 2026-05-01 09:00 A | 5SS | 100% |  |  |  |  | Analista 02 | 8h | 8h | 600 | 127.5 | 600 | Concluída | 1.1.1.1.2 | Modelagem | Analista 01 |
| 7 | 1.1.1.1.3 | Elaborar EL-CD_001 - Diagrama de Classes de "Modelo de análise" | 6h | 2026-05-01 09:00 A | 2026-05-01 16:00 A | 6 | 100% |  |  |  |  | Analista 03 | 6h | 6h | 450 | 63.75 | 450 | Concluída | 1.1.1.1.3 | Modelagem | Analista 01 |
| 8 | 1.1.1.1.4 | Elaborar EL-MER_001 - Modelo Entidade Relacionamento de "Modelo de análise" | 6h | 2026-05-01 16:00 A | 2026-05-04 14:00 A | 7SS | 100% |  |  |  |  | Analista 04 | 6h | 6h | 450 | 63.75 | 450 | Concluída | 1.1.1.1.4 | Modelagem | Analista 01 |
| 9 | 1.1.1.1.5 | Gerar EL-Script_001 - Esquema/Script de "Modelo de análise" | 4h | 2026-05-04 14:00 A | 2026-05-05 09:00 A | 8 | 100% |  |  |  |  | Analista 01 | 4h | 4h | 300 | 63.75 | 300 | Concluída | 1.1.1.1.5 | Modelagem | Analista 01 |
| 10 | 1.1.1.1.6 | Elaborar EL-DBD_001 - Documentação de Banco de Dados de "Modelo de análise" | 4h | 2026-05-05 09:00 A | 2026-05-05 14:00 A | 9 | 100% |  |  |  |  | Analista 01 | 4h | 4h | 300 | 42.5 | 300 | Concluída | 1.1.1.1.6 | Modelagem | Analista 01 |
| 11 | 1.1.1.2 | **"Controle de acesso"** | 36h | 2026-04-29 09:00 A | 2026-05-05 14:00 |  | 44% | 20h | 1.5d |  |  |  | 36h | 16h | 2,700 | 488.75 | 1,200 | Concluída | 1.1.1.2 | Modelagem |  |
| 12 | 1.1.1.2.1 | Elaborar EL-UCD_002 - Diagrama de Caso de Uso de "Controle de acesso" | 8h | 2026-04-29 09:00 | 2026-04-30 09:00 |  |  |  | 5d | 1d |  | Analista 05 | 8h |  | 600 | 127.5 |  | Concluída | 1.1.1.2.1 | Modelagem | Analista 02 |
| 13 | 1.1.1.2.2 | Redigir EL-UCE_002 - Especificação de Caso de Uso de "Controle de acesso" | 8h | 2026-04-30 09:00 | 2026-05-01 09:00 | 12SS |  |  | 4d |  | start no earlier than 2026-04-30 09:00 | Analista 06 | 8h |  | 600 | 127.5 |  | Concluída | 1.1.1.2.2 | Modelagem | Analista 02 |
| 14 | 1.1.1.2.3 | Elaborar EL-CD_002 - Diagrama de Classes de "Controle de acesso" | 6h | 2026-05-01 09:00 A | 2026-05-01 16:00 A | 13 | 100% |  |  |  |  | Analista 07 | 6h | 6h | 450 | 63.75 | 450 | Concluída | 1.1.1.2.3 | Modelagem | Analista 02 |
| 15 | 1.1.1.2.4 | Elaborar EL-MER_002 - Modelo Entidade Relacionamento de "Controle de acesso" | 6h | 2026-05-01 16:00 A | 2026-05-04 14:00 A | 14SS | 100% |  |  |  |  | Analista 06 | 6h | 6h | 450 | 63.75 | 450 | Concluída | 1.1.1.2.4 | Modelagem | Analista 02 |
| 16 | 1.1.1.2.5 | Gerar EL-Script_002 - Esquema/Script de "Controle de acesso" | 4h | 2026-05-04 14:00 A | 2026-05-05 09:00 A | 15 | 100% |  |  |  |  | Analista 07 | 4h | 4h | 300 | 63.75 | 300 | Concluída | 1.1.1.2.5 | Modelagem | Analista 02 |
| 17 | 1.1.1.2.6 | Elaborar EL-DBD_002 - Documentação de Banco de Dados de "Controle de acesso" | 4h | 2026-05-05 09:00 | 2026-05-05 14:00 | 16 |  |  | 1.5d |  |  | Analista 08 | 4h |  | 300 | 42.5 |  | Concluída | 1.1.1.2.6 | Modelagem | Analista 02 |
| 18 | 1.1.1.3 | **"Cadastro de usuário"** | 36h | 2026-04-29 09:00 A | 2026-05-05 14:00 |  | 67% | 12h | 49.5d |  |  |  | 36h | 24h | 2,700 | 488.75 | 1,800 | Concluída | 1.1.1.3 | Modelagem |  |
| 19 | 1.1.1.3.1 | Elaborar EL-UCD_003 - Diagrama de Caso de Uso de "Cadastro de usuário" | 8h | 2026-04-29 09:00 | 2026-04-30 09:00 |  |  |  | 53d |  |  | Analista 09 | 8h |  | 600 | 127.5 |  | Concluída | 1.1.1.3.1 | Modelagem | Analista 03 |
| 20 | 1.1.1.3.2 | Redigir EL-UCE_003 - Especificação de Caso de Uso de "Cadastro de usuário" | 8h | 2026-04-30 09:00 A | 2026-05-01 09:00 A | 19 | 100% |  |  |  |  | Analista 10 | 8h | 8h | 600 | 127.5 | 600 | Concluída | 1.1.1.3.2 | Modelagem | Analista 03 |
| 21 | 1.1.1.3.3 | Elaborar EL-CD_003 - Diagrama de Classes de "Cadastro de usuário" | 6h | 2026-05-01 09:00 A | 2026-05-01 16:00 A | 20 | 100% |  |  |  |  | Analista 09 | 6h | 6h | 450 | 63.75 | 450 | Concluída | 1.1.1.3.3 | Modelagem | Analista 03 |
| 22 | 1.1.1.3.4 | Elaborar EL-MER_003 - Modelo Entidade Relacionamento de "Cadastro de usuário" | 6h | 2026-05-01 16:00 A | 2026-05-04 14:00 A | 21 | 100% |  |  |  |  | Analista 11 | 6h | 6h | 450 | 63.75 | 450 | Concluída | 1.1.1.3.4 | Modelagem | Analista 03 |
| 23 | 1.1.1.3.5 | Gerar EL-Script_003 - Esquema/Script de "Cadastro de usuário" | 4h | 2026-05-04 14:00 | 2026-05-05 09:00 | 22 |  |  | 50d |  |  | Analista 12 | 4h |  | 300 | 63.75 |  | Concluída | 1.1.1.3.5 | Modelagem | Analista 03 |
| 24 | 1.1.1.3.6 | Elaborar EL-DBD_003 - Documentação de Banco de Dados de "Cadastro de usuário" | 4h | 2026-05-05 09:00 A | 2026-05-05 14:00 A | 23 | 100% |  |  |  |  | Analista 11 | 4h | 4h | 300 | 42.5 | 300 | Concluída | 1.1.1.3.6 | Modelagem | Analista 03 |

| ID | WBS | Task | Duration | Start | Finish | Predecessors | Complete | Remaining | Total slack | Free slack | Constraint | Resources | Work | Actual work | Cost | Baseline cost | Actual cost | Text1 | Fase | Status EVM | Responsável |
| --- | --- | --- | --- | --- | --- | --- | --- | --- | --- | --- | --- | --- | --- | --- | --- | --- | --- | --- | --- | --- | --- |
| 25 | 1.1.1.4 | **"Gestão de pagamento"** | 36h | 2026-04-29 09:00 A | 2026-05-05 14:00 |  | 33% | 24h | 2.5d | 1.5d |  |  | 36h | 12h | 2,700 | 573.75 | 900 | 1.1.1.4 | Modelagem | Concluída |  |
| 26 | 1.1.1.4.1 | Elaborar EL-UCD_004 - Diagrama de Caso de Uso de "Gestão de pagamento" | 8h | 2026-04-29 09:00 A | 2026-04-30 09:00 A |  | 100% |  |  |  |  | Analista 13 | 8h | 8h | 600 | 127.5 | 600 | 1.1.1.4.1 | Modelagem | Concluída | Analista 04 |
| 27 | 1.1.1.4.2 | Redigir EL-UCE_004 - Especificação de Caso de Uso de "Gestão de pagamento" | 8h | 2026-04-30 09:00 | 2026-05-01 09:00 | 26 |  |  | 3d | 0d |  | Analista 13 | 8h |  | 600 | 127.5 |  | 1.1.1.4.2 | Modelagem | Concluída | Analista 04 |
| 28 | 1.1.1.4.3 | Elaborar EL-CD_004 - Diagrama de Classes de "Gestão de pagamento" | 6h | 2026-05-01 09:00 | 2026-05-01 16:00 | 27 |  |  | 3d | 0d |  | Analista 14 | 6h |  | 450 | 63.75 |  | 1.1.1.4.3 | Modelagem | Concluída | Analista 04 |
| 29 | 1.1.1.4.4 | Elaborar EL-MER_004 - Modelo Entidade Relacionamento de "Gestão de pagamento" | 6h | 2026-05-01 16:00 | 2026-05-04 14:00 | 28 |  |  | 3d | 0d |  | Analista 15 | 6h |  | 450 | 63.75 |  | 1.1.1.4.4 | Modelagem | Concluída | Analista 04 |
| 30 | 1.1.1.4.5 | Gerar EL-Script_004 - Esquema/Script de "Gestão de pagamento" | 4h | 2026-05-04 14:00 | 2026-05-05 09:00 | 29 |  |  | 3d |  |  | Analista 14 | 4h |  | 300 | 63.75 |  | 1.1.1.4.5 | Modelagem | Concluída | Analista 04 |
| 31 | 1.1.1.4.6 | Elaborar EL-DBD_004 - Documentação de Banco de Dados de "Gestão de pagamento" | 4h | 2026-05-05 09:00 A | 2026-05-05 14:00 A | 30 | 100% |  |  |  |  | Analista 15 | 4h | 4h | 300 | 127.5 | 300 | 1.1.1.4.6 | Modelagem | Concluída | Analista 04 |
| 32 | 1.1.2 | **Construção** | 40h | 2026-05-07 09:00 A | 2026-05-14 09:00 |  | 73% | 11h |  |  |  |  | 160h | 116h | 12,800 | 3,925 | 9,280 | 1.1.2 | Construção | Concluída |  |
| 33 | 1.1.2.1 | **"Modelo de análise"** | 40h | 2026-05-07 09:00 A | 2026-05-14 09:00 A | 4 | 100% |  |  |  |  |  | 40h | 40h | 3,200 | 1,000 | 3,200 | 1.1.2.1 | Construção | Concluída |  |
| 34 | 1.1.2.1.1 | Implementar EL-CMC_005 - Classes, Métodos e Componentes de "Modelo de análise" | 12h | 2026-05-07 09:00 A | 2026-05-08 14:00 A |  | 100% |  |  |  |  | Dev 01 | 12h | 12h | 960 | 325 | 960 | 1.1.2.1.1 | Construção | Concluída | Dev 01 |
| 35 | 1.1.2.1.2 | Implementar EL-FUX_005 - Front-UX de "Modelo de análise" | 8h | 2026-05-08 14:00 A | 2026-05-11 14:00 A | 34SS | 100% |  |  |  |  | Dev 02 | 8h | 8h | 640 | 275 | 640 | 1.1.2.1.2 | Construção | Concluída | Dev 01 |
| 36 | 1.1.2.1.3 | Identificar EL-API_005 - APIs de "Modelo de análise" | 8h | 2026-05-11 14:00 A | 2026-05-12 14:00 A | 35SS | 100% |  |  |  |  | Dev 01 | 8h | 8h | 640 | 150 | 640 | 1.1.2.1.3 | Construção | Concluída | Dev 01 |
| 37 | 1.1.2.1.4 | Criar EL-IBD_005 - Interface do Mapeamento de Banco de Dados de "Modelo de análise" | 8h | 2026-05-12 14:00 A | 2026-05-13 14:00 A | 36 | 100% |  |  |  |  | Dev 03 | 8h | 8h | 640 | 150 | 640 | 1.1.2.1.4 | Construção | Concluída | Dev 01 |
| 38 | 1.1.2.1.5 | Integração parcial EL-IP_005 - "Modelo de análise" | 4h | 2026-05-13 14:00 A | 2026-05-14 09:00 A | 37 | 100% |  |  |  |  | Dev 04 | 4h | 4h | 320 | 100 | 320 | 1.1.2.1.5 | Construção | Concluída | Dev 01 |
| 39 | 1.1.2.2 | **"Controle de acesso"** | 40h | 2026-05-07 09:00 A | 2026-05-14 09:00 | 11 | 80% | 8h | 43d |  |  |  | 40h | 32h | 3,200 | 1,000 | 2,560 | 1.1.2.2 | Construção | Concluída |  |
| 40 | 1.1.2.2.1 | Implementar EL-CMC_006 - Classes, Métodos e Componentes de "Controle de acesso" | 12h | 2026-05-07 09:00 A | 2026-05-08 14:00 A |  | 100% |  |  |  |  | Dev 05 | 12h | 12h | 960 | 325 | 960 | 1.1.2.2.1 | Construção | Concluída | Dev 02 |
| 41 | 1.1.2.2.2 | Implementar EL-FUX_006 - Front-UX de "Controle de acesso" | 8h | 2026-05-08 14:00 | 2026-05-11 14:00 | 40 |  |  | 45.5d |  |  | Dev 06 | 8h |  | 640 | 275 |  | 1.1.2.2.2 | Construção | Concluída | Dev 02 |
| 42 | 1.1.2.2.3 | Identificar EL-API_006 - APIs de "Controle de acesso" | 8h | 2026-05-11 14:00 A | 2026-05-12 14:00 A | 41 | 100% |  |  |  |  | Dev 07 | 8h | 8h | 640 | 150 | 640 | 1.1.2.2.3 | Construção | Concluída | Dev 02 |
| 43 | 1.1.2.2.4 | Criar EL-IBD_006 - Interface do Mapeamento de Banco de Dados de "Controle de acesso" | 8h | 2026-05-12 14:00 A | 2026-05-13 14:00 A | 42 | 100% |  |  |  |  | Dev 05 | 8h | 8h | 640 | 150 | 640 | 1.1.2.2.4 | Construção | Concluída | Dev 02 |
| 44 | 1.1.2.2.5 | Integração parcial EL-IP_006 - "Controle de acesso" | 4h | 2026-05-13 14:00 A | 2026-05-14 09:00 A | 43 | 100% |  |  |  |  | Dev 08 | 4h | 4h | 320 | 100 | 320 | 1.1.2.2.5 | Construção | Concluída | Dev 02 |
| 45 | 1.1.2.3 | **"Cadastro de usuário"** | 4.5d | 2026-05-07 09:00 A | 2026-05-13 14:00 |  | 70% | 1.35d | 43.5d |  |  |  | 40h | 28h | 3,200 | 1,000 | 2,240 | 1.1.2.3 | Construção | Concluída |  |
| 46 | 1.1.2.3.1 | Implementar EL-CMC_007 - Classes, Métodos e Componentes de "Cadastro de usuário" | 12h | 2026-05-07 09:00 A | 2026-05-08 14:00 A |  | 100% |  |  |  |  | Dev 09 | 12h | 12h | 960 | 325 | 960 | 1.1.2.3.1 | Construção | Concluída | Dev 03 |
| 47 | 1.1.2.3.2 | Implementar EL-FUX_007 - Front-UX de "Cadastro de usuário" | 8h | 2026-05-08 14:00 A | 2026-05-11 14:00 A | 46SS | 100% |  |  |  |  | Dev 10 | 8h | 8h | 640 | 275 | 640 | 1.1.2.3.2 | Construção | Concluída | Dev 03 |
| 48 | 1.1.2.3.3 | Identificar EL-API_007 - APIs de "Cadastro de usuário" | 8h | 2026-05-11 14:00 A | 2026-05-12 14:00 A | 47 | 100% |  |  |  |  | Dev 09 | 8h | 8h | 640 | 150 | 640 | 1.1.2.3.3 | Construção | Concluída | Dev 03 |
| 49 | 1.1.2.3.4 | Criar EL-IBD_007 - Interface do Mapeamento de Banco de Dados de "Cadastro de usuário" | 8h | 2026-05-12 09:00 | 2026-05-13 09:00 | 48SS |  |  | 43.5d | 0d | start no earlier than 2026-05-12 09:00 | Dev 11 | 8h |  | 640 | 150 |  | 1.1.2.3.4 | Construção | Concluída | Dev 03 |
| 50 | 1.1.2.3.5 | Integração parcial EL-IP_007 - "Cadastro de usuário" | 4h | 2026-05-13 09:00 | 2026-05-13 14:00 | 49 |  |  | 43.5d |  | start no earlier than 2026-05-13 09:00 | Dev 12 | 4h |  | 320 | 100 |  | 1.1.2.3.5 | Construção | Concluída | Dev 03 |

| ID | WBS | Task | Duration | Start | Finish | Predecessors | Complete | Remaining | Total slack | Free slack | Resources | Work | Actual work | Cost | Baseline cost | Actual cost | Text1 | Fase | Status EVM | Responsável |
| --- | --- | --- | --- | --- | --- | --- | --- | --- | --- | --- | --- | --- | --- | --- | --- | --- | --- | --- | --- | --- |
| 51 | 1.1.2.4 | **"Gestão de pagamento"** | 40h | 2026-05-07 09:00 A | 2026-05-14 09:00 | 25 | 40% | 24h |  |  |  | 40h | 16h | 3,200 | 925 | 1,280 | 1.1.2.4 | Construção | Concluída |  |
| 52 | 1.1.2.4.1 | Implementar EL-CMC_008 - Classes, Métodos e Componentes de "Gestão de pagamento" | 12h | 2026-05-07 09:00 | 2026-05-08 14:00 |  |  |  | 46.5d |  | Dev 13 | 12h |  | 960 | 325 |  | 1.1.2.4.1 | Construção | Concluída | Dev 04 |
| 53 | 1.1.2.4.2 | Implementar EL-FUX_008 - Front-UX de "Gestão de pagamento" | 8h | 2026-05-08 09:00 A | 2026-05-11 09:00 A | 52SS | 100% |  |  |  | Dev 14 | 8h | 8h | 640 | 275 | 640 | 1.1.2.4.2 | Construção | Concluída | Dev 04 |
| 54 | 1.1.2.4.3 | Identificar EL-API_008 - APIs de "Gestão de pagamento" | 8h | 2026-05-11 14:00 A | 2026-05-12 14:00 A | 53 | 100% |  |  |  | Dev 13 | 8h | 8h | 640 | 150 | 640 | 1.1.2.4.3 | Construção | Concluída | Dev 04 |
| 55 | 1.1.2.4.4 | Criar EL-IBD_008 - Interface do Mapeamento de Banco de Dados de "Gestão de pagamento" | 8h | 2026-05-12 14:00 | 2026-05-13 14:00 | 54 |  |  | 43d | 0d | Dev 15 | 8h |  | 640 | 150 |  | 1.1.2.4.4 | Construção | Concluída | Dev 04 |
| 56 | 1.1.2.4.5 | Integração parcial EL-IP_008 - "Gestão de pagamento" | 4h | 2026-05-13 14:00 | 2026-05-14 09:00 | 55 |  |  | 43d |  | Dev 16 | 4h |  | 320 | 25 |  | 1.1.2.4.5 | Construção | Concluída | Dev 04 |
| 57 | 1.1.3 | **Testes** | 20h | 2026-05-18 09:00 A | 2026-05-20 14:00 |  | 73% | 5.5h | 38.5d |  |  | 80h | 58h | 4,400 | 700 | 3,190 | 1.1.3 | Testes | Concluída |  |
| 58 | 1.1.3.1 | **"Modelo de análise"** | 20h | 2026-05-18 09:00 A | 2026-05-20 14:00 A |  | 100% |  |  |  |  | 20h | 20h | 1,100 | 180 | 1,100 | 1.1.3.1 | Testes | Concluída |  |
| 59 | 1.1.3.1.1 | Implementar EL-TC_009 - Casos de Teste de "Modelo de análise" | 4h | 2026-05-18 09:00 A | 2026-05-18 14:00 A |  | 100% |  |  |  | QA 01 | 4h | 4h | 220 | 60 | 220 | 1.1.3.1.1 | Testes | Concluída | QA 01 |
| 60 | 1.1.3.1.2 | Executar EL-T_009 - Testes de "Modelo de análise" | 6h | 2026-05-18 14:00 A | 2026-05-19 11:00 A | 59SS | 100% |  |  |  | QA 02 | 6h | 6h | 330 | 60 | 330 | 1.1.3.1.2 | Testes | Concluída | QA 01 |
| 61 | 1.1.3.1.3 | Registrar EL-LT_009 - Logs de Teste de "Modelo de análise" | 4h | 2026-05-19 11:00 A | 2026-05-19 16:00 A | 60 | 100% |  |  |  | QA 01 | 4h | 4h | 220 | 40 | 220 | 1.1.3.1.3 | Testes | Concluída | QA 01 |
| 62 | 1.1.3.1.4 | Executar EL-TH_009 - Testes de Homologação de "Modelo de análise" | 6h | 2026-05-19 16:00 A | 2026-05-20 14:00 A | 61 | 100% |  |  |  | QA 03 | 6h | 6h | 330 | 20 | 330 | 1.1.3.1.4 | Testes | Concluída | QA 01 |
| 63 | 1.1.3.2 | **"Controle de acesso"** | 20h | 2026-05-18 09:00 A | 2026-05-20 14:00 |  | 70% | 6h | 38.5d |  |  | 20h | 14h | 1,100 | 180 | 770 | 1.1.3.2 | Testes | Concluída |  |
| 64 | 1.1.3.2.1 | Implementar EL-TC_010 - Casos de Teste de "Controle de acesso" | 4h | 2026-05-18 09:00 A | 2026-05-18 14:00 A |  | 100% |  |  |  | QA 04 | 4h | 4h | 220 | 60 | 220 | 1.1.3.2.1 | Testes | Concluída | QA 02 |
| 65 | 1.1.3.2.2 | Executar EL-T_010 - Testes de "Controle de acesso" | 6h | 2026-05-18 14:00 | 2026-05-19 11:00 | 64 |  |  | 39.75d |  | QA 05 | 6h |  | 330 | 60 |  | 1.1.3.2.2 | Testes | Concluída | QA 02 |
| 66 | 1.1.3.2.3 | Registrar EL-LT_010 - Logs de Teste de "Controle de acesso" | 4h | 2026-05-19 11:00 A | 2026-05-19 16:00 A | 65 | 100% |  |  |  | QA 06 | 4h | 4h | 220 | 40 | 220 | 1.1.3.2.3 | Testes | Concluída | QA 02 |
| 67 | 1.1.3.2.4 | Executar EL-TH_010 - Testes de Homologação de "Controle de acesso" | 6h | 2026-05-19 16:00 A | 2026-05-20 14:00 A | 66 | 100% |  |  |  | QA 05 | 6h | 6h | 330 | 20 | 330 | 1.1.3.2.4 | Testes | Concluída | QA 02 |
| 68 | 1.1.3.3 | **"Cadastro de usuário"** | 20h | 2026-05-18 09:00 A | 2026-05-20 14:00 A |  | 100% |  |  |  |  | 20h | 20h | 1,100 | 180 | 1,100 | 1.1.3.3 | Testes | Concluída |  |
| 69 | 1.1.3.3.1 | Implementar EL-TC_011 - Casos de Teste de "Cadastro de usuário" | 4h | 2026-05-18 09:00 A | 2026-05-18 14:00 A |  | 100% |  |  |  | QA 07 | 4h | 4h | 220 | 60 | 220 | 1.1.3.3.1 | Testes | Concluída | QA 03 |
| 70 | 1.1.3.3.2 | Executar EL-T_011 - Testes de "Cadastro de usuário" | 6h | 2026-05-18 14:00 A | 2026-05-19 11:00 A | 69 | 100% |  |  |  | QA 07 | 6h | 6h | 330 | 60 | 330 | 1.1.3.3.2 | Testes | Concluída | QA 03 |
| 71 | 1.1.3.3.3 | Registrar EL-LT_011 - Logs de Teste de "Cadastro de usuário" | 4h | 2026-05-19 11:00 A | 2026-05-19 16:00 A | 70 | 100% |  |  |  | QA 08 | 4h | 4h | 220 | 40 | 220 | 1.1.3.3.3 | Testes | Concluída | QA 03 |
| 72 | 1.1.3.3.4 | Executar EL-TH_011 - Testes de Homologação de "Cadastro de usuário" | 6h | 2026-05-19 16:00 A | 2026-05-20 14:00 A | 71 | 100% |  |  |  | QA 09 | 6h | 6h | 330 | 20 | 330 | 1.1.3.3.4 | Testes | Concluída | QA 03 |
| 73 | 1.1.3.4 | **"Gestão de pagamento"** | 20h | 2026-05-18 09:00 A | 2026-05-20 14:00 |  | 20% | 16h | 38.5d |  |  | 20h | 4h | 1,100 | 160 | 220 | 1.1.3.4 | Testes | Concluída |  |
| 74 | 1.1.3.4.1 | Implementar EL-TC_012 - Casos de Teste de "Gestão de pagamento" | 4h | 2026-05-18 09:00 A | 2026-05-18 14:00 A |  | 100% |  |  |  | QA 10 | 4h | 4h | 220 | 60 | 220 | 1.1.3.4.1 | Testes | Concluída | QA 04 |
| 75 | 1.1.3.4.2 | Executar EL-T_012 - Testes de "Gestão de pagamento" | 6h | 2026-05-18 14:00 | 2026-05-19 11:00 | 74 |  |  | 38.5d | 0d | QA 11 | 6h |  | 330 | 60 |  | 1.1.3.4.2 | Testes | Concluída | QA 04 |
| 76 | 1.1.3.4.3 | Registrar EL-LT_012 - Logs de Teste de "Gestão de pagamento" | 4h | 2026-05-19 11:00 | 2026-05-19 16:00 | 75 |  |  | 38.5d | 0d | QA 12 | 4h |  | 220 | 40 |  | 1.1.3.4.3 | Testes | Concluída | QA 04 |
| 77 | 1.1.3.4.4 | Executar EL-TH_012 - Testes de Homologação de "Gestão de pagamento" | 6h | 2026-05-19 16:00 | 2026-05-20 14:00 | 76 |  |  | 38.5d |  | QA 13 | 6h |  | 330 |  |  | 1.1.3.4.4 | Testes | Concluída | QA 04 |

| ID | WBS | Task | Type | Duration | Start | Finish | Predecessors | Complete | Remaining | Total slack | Constraint | Resources | Work | Actual work | Cost | Baseline cost | Actual cost | Text1 | Fase | Status EVM | Responsável |
| --- | --- | --- | --- | --- | --- | --- | --- | --- | --- | --- | --- | --- | --- | --- | --- | --- | --- | --- | --- | --- | --- |
| 78 | 1.1.4 | **Implantação** |  | 4h | 2026-05-21 09:00 A | 2026-05-21 14:00 A |  | 100% |  |  |  |  | 7h | 7h | 329 | 1,440 | 329 | 1.1.4 | Implantação | Concluída |  |
| 79 | 1.1.4.1 | **"Modelo de análise"** |  | 1h | 2026-05-21 09:00 A | 2026-05-21 10:00 A | 58 | 100% |  |  |  |  | 1h | 1h | 47 | 360 | 47 | 1.1.4.1 | Implantação | Concluída |  |
| 80 | 1.1.4.1.1 | Integração total EL-IT_013 - "Modelo de análise" |  | 1h | 2026-05-21 09:00 A | 2026-05-21 10:00 A |  | 100% |  |  |  | Integrador | 1h | 1h | 47 | 360 | 47 | 1.1.4.1.1 | Implantação | Concluída | Integrador |
| 81 | 1.1.4.2 | **"Controle de acesso"** |  | 1h | 2026-05-21 09:00 A | 2026-05-21 10:00 A | 63 | 100% |  |  |  |  | 1h | 1h | 47 | 360 | 47 | 1.1.4.2 | Implantação | Concluída |  |
| 82 | 1.1.4.2.1 | Integração total EL-IT_014 - "Controle de acesso" |  | 1h | 2026-05-21 09:00 A | 2026-05-21 10:00 A |  | 100% |  |  |  | Integrador 02 | 1h | 1h | 47 | 360 | 47 | 1.1.4.2.1 | Implantação | Concluída | Integrador 02 |
| 83 | 1.1.4.3 | **"Cadastro de usuário"** |  | 1h | 2026-05-21 09:00 A | 2026-05-21 10:00 A | 68 | 100% |  |  |  |  | 1h | 1h | 47 | 360 | 47 | 1.1.4.3 | Implantação | Concluída |  |
| 84 | 1.1.4.3.1 | Integração total EL-IT_015 - "Cadastro de usuário" |  | 1h | 2026-05-21 09:00 A | 2026-05-21 10:00 A |  | 100% |  |  |  | Integrador 03 | 1h | 1h | 47 | 360 | 47 | 1.1.4.3.1 | Implantação | Concluída | Integrador 03 |
| 85 | 1.1.4.4 | **"Gestão de pagamento"** |  | 4h | 2026-05-21 09:00 A | 2026-05-21 14:00 A | 73 | 100% |  |  |  |  | 4h | 4h | 188 | 360 | 188 | 1.1.4.4 | Implantação | Concluída |  |
| 86 | 1.1.4.4.1 | Integração total EL-IT_016 - "Gestão de pagamento" |  | 4h | 2026-05-21 09:00 A | 2026-05-21 14:00 A |  | 100% |  |  |  | Integrador 04 | 4h | 4h | 188 | 360 | 188 | 1.1.4.4.1 | Implantação | Concluída | Integrador 04 |
| 87 | 1.1.5 | ★ Marco da Entrega da Iteração 01 | milestone | 0h | 2026-05-22 18:00 | 2026-05-22 18:00 | 86 |  |  | 0d | must finish on 2026-05-22 18:00 |  |  |  |  |  |  | 1.1.5 | Marco | Concluída | Gerente de Projeto |
| 88 | 1.2 | **Iteração 02** |  | 119h | 2026-05-25 09:00 A | 2026-06-12 18:00 | 87 | 77% | 27.16h | 21.12d | start no earlier than 2026-05-25 09:00 |  | 671h | 524h | 48,289 | 7,982.5 | 40,700 | 1.2 |  | Concluída |  |
| 89 | 1.2.1 | **Modelagem** |  | 36h | 2026-05-25 09:00 A | 2026-05-29 14:00 |  | 97% | 1.14h | 31.5d |  |  | 244h | 244h | 18,300 | 1,912.5 | 18,300 | 1.2.1 | Modelagem | Concluída |  |
| 90 | 1.2.1.1 | **"Nível de acesso ao sistema"** |  | 36h | 2026-05-25 09:00 A | 2026-05-29 14:00 A |  | 100% |  |  |  |  | 36h | 36h | 2,700 | 255 | 2,700 | 1.2.1.1 | Modelagem | Concluída |  |
| 91 | 1.2.1.1.1 | Elaborar EL-UCD_017 - Diagrama de Caso de Uso de "Nível de acesso ao sistema" |  | 8h | 2026-05-25 09:00 A | 2026-05-26 09:00 A |  | 100% |  |  |  | Analista 01 | 8h | 8h | 600 | 63.75 | 600 | 1.2.1.1.1 | Modelagem | Concluída | Analista 01 |
| 92 | 1.2.1.1.2 | Redigir EL-UCE_017 - Especificação de Caso de Uso de "Nível de acesso ao sistema" |  | 8h | 2026-05-26 09:00 A | 2026-05-27 09:00 A | 91 | 100% |  |  |  | Analista 02 | 8h | 8h | 600 | 63.75 | 600 | 1.2.1.1.2 | Modelagem | Concluída | Analista 01 |
| 93 | 1.2.1.1.3 | Elaborar EL-CD_017 - Diagrama de Classes de "Nível de acesso ao sistema" |  | 6h | 2026-05-27 09:00 A | 2026-05-27 16:00 A | 92 | 100% |  |  |  | Analista 03 | 6h | 6h | 450 | 42.5 | 450 | 1.2.1.1.3 | Modelagem | Concluída | Analista 01 |
| 94 | 1.2.1.1.4 | Elaborar EL-MER_017 - Modelo Entidade Relacionamento de "Nível de acesso ao sistema" |  | 6h | 2026-05-27 16:00 A | 2026-05-28 14:00 A | 93 | 100% |  |  |  | Analista 04 | 6h | 6h | 450 | 42.5 | 450 | 1.2.1.1.4 | Modelagem | Concluída | Analista 01 |
| 95 | 1.2.1.1.5 | Gerar EL-Script_017 - Esquema/Script de "Nível de acesso ao sistema" |  | 4h | 2026-05-28 14:00 A | 2026-05-29 09:00 A | 94 | 100% |  |  |  | Analista 01 | 4h | 4h | 300 | 21.25 | 300 | 1.2.1.1.5 | Modelagem | Concluída | Analista 01 |
| 96 | 1.2.1.1.6 | Elaborar EL-DBD_017 - Documentação de Banco de Dados de "Nível de acesso ao sistema" |  | 4h | 2026-05-29 09:00 A | 2026-05-29 14:00 A | 95 | 100% |  |  |  | Analista 01 | 4h | 4h | 300 | 21.25 | 300 | 1.2.1.1.6 | Modelagem | Concluída | Analista 01 |
| 97 | 1.2.1.2 | **"Cadastro de profissionais"** |  | 36h | 2026-05-25 09:00 A | 2026-05-29 14:00 A |  | 100% |  |  |  |  | 36h | 36h | 2,700 | 255 | 2,700 | 1.2.1.2 | Modelagem | Concluída |  |
| 98 | 1.2.1.2.1 | Elaborar EL-UCD_018 - Diagrama de Caso de Uso de "Cadastro de profissionais" |  | 8h | 2026-05-25 09:00 A | 2026-05-26 09:00 A |  | 100% |  |  |  | Analista 05 | 8h | 8h | 600 | 63.75 | 600 | 1.2.1.2.1 | Modelagem | Concluída | Analista 02 |
| 99 | 1.2.1.2.2 | Redigir EL-UCE_018 - Especificação de Caso de Uso de "Cadastro de profissionais" |  | 8h | 2026-05-26 09:00 A | 2026-05-27 09:00 A | 98 | 100% |  |  |  | Analista 06 | 8h | 8h | 600 | 63.75 | 600 | 1.2.1.2.2 | Modelagem | Concluída | Analista 02 |
| 100 | 1.2.1.2.3 | Elaborar EL-CD_018 - Diagrama de Classes de "Cadastro de profissionais" |  | 6h | 2026-05-27 09:00 A | 2026-05-27 16:00 A | 99 | 100% |  |  |  | Analista 07 | 6h | 6h | 450 | 42.5 | 450 | 1.2.1.2.3 | Modelagem | Concluída | Analista 02 |
| 101 | 1.2.1.2.4 | Elaborar EL-MER_018 - Modelo Entidade Relacionamento de "Cadastro de profissionais" |  | 6h | 2026-05-27 16:00 A | 2026-05-28 14:00 A | 100 | 100% |  |  |  | Analista 06 | 6h | 6h | 450 | 42.5 | 450 | 1.2.1.2.4 | Modelagem | Concluída | Analista 02 |
| 102 | 1.2.1.2.5 | Gerar EL-Script_018 - Esquema/Script de "Cadastro de profissionais" |  | 4h | 2026-05-28 14:00 A | 2026-05-29 09:00 A | 101 | 100% |  |  |  | Analista 07 | 4h | 4h | 300 | 21.25 | 300 | 1.2.1.2.5 | Modelagem | Concluída | Analista 02 |
| 103 | 1.2.1.2.6 | Elaborar EL-DBD_018 - Documentação de Banco de Dados de "Cadastro de profissionais" |  | 4h | 2026-05-29 09:00 A | 2026-05-29 14:00 A | 102 | 100% |  |  |  | Analista 08 | 4h | 4h | 300 | 21.25 | 300 | 1.2.1.2.6 | Modelagem | Concluída | Analista 02 |

| ID | WBS | Task | Duration | Start | Finish | Predecessors | Complete | Remaining | Total slack | Resources | Work | Actual work | Cost | Baseline cost | Actual cost | Text1 | Fase | Status EVM | Responsável |
| --- | --- | --- | --- | --- | --- | --- | --- | --- | --- | --- | --- | --- | --- | --- | --- | --- | --- | --- | --- |
| 104 | 1.2.1.3 | **"Definição de taxa de serviço"** | 36h | 2026-05-25 09:00 A | 2026-05-29 14:00 A |  | 100% |  |  |  | 36h | 36h | 2,700 | 255 | 2,700 | 1.2.1.3 | Modelagem | Concluída |  |
| 105 | 1.2.1.3.1 | Elaborar EL-UCD_019 - Diagrama de Caso de Uso de "Definição de taxa de serviço" | 8h | 2026-05-25 09:00 A | 2026-05-26 09:00 A |  | 100% |  |  | Analista 09 | 8h | 8h | 600 | 63.75 | 600 | 1.2.1.3.1 | Modelagem | Concluída | Analista 03 |
| 106 | 1.2.1.3.2 | Redigir EL-UCE_019 - Especificação de Caso de Uso de "Definição de taxa de serviço" | 8h | 2026-05-26 09:00 A | 2026-05-27 09:00 A | 105 | 100% |  |  | Analista 10 | 8h | 8h | 600 | 63.75 | 600 | 1.2.1.3.2 | Modelagem | Concluída | Analista 03 |
| 107 | 1.2.1.3.3 | Elaborar EL-CD_019 - Diagrama de Classes de "Definição de taxa de serviço" | 6h | 2026-05-27 09:00 A | 2026-05-27 16:00 A | 106 | 100% |  |  | Analista 09 | 6h | 6h | 450 | 42.5 | 450 | 1.2.1.3.3 | Modelagem | Concluída | Analista 03 |
| 108 | 1.2.1.3.4 | Elaborar EL-MER_019 - Modelo Entidade Relacionamento de "Definição de taxa de serviço" | 6h | 2026-05-27 16:00 A | 2026-05-28 14:00 A | 107 | 100% |  |  | Analista 11 | 6h | 6h | 450 | 42.5 | 450 | 1.2.1.3.4 | Modelagem | Concluída | Analista 03 |
| 109 | 1.2.1.3.5 | Gerar EL-Script_019 - Esquema/Script de "Definição de taxa de serviço" | 4h | 2026-05-28 14:00 A | 2026-05-29 09:00 A | 108 | 100% |  |  | Analista 12 | 4h | 4h | 300 | 21.25 | 300 | 1.2.1.3.5 | Modelagem | Concluída | Analista 03 |
| 110 | 1.2.1.3.6 | Elaborar EL-DBD_019 - Documentação de Banco de Dados de "Definição de taxa de serviço" | 4h | 2026-05-29 09:00 A | 2026-05-29 14:00 A | 109 | 100% |  |  | Analista 11 | 4h | 4h | 300 | 21.25 | 300 | 1.2.1.3.6 | Modelagem | Concluída | Analista 03 |
| 111 | 1.2.1.4 | **"Controle de assinatura de contrato"** | 36h | 2026-05-25 09:00 A | 2026-05-29 14:00 A |  | 100% |  |  |  | 36h | 36h | 2,700 | 255 | 2,700 | 1.2.1.4 | Modelagem | Concluída |  |
| 112 | 1.2.1.4.1 | Elaborar EL-UCD_020 - Diagrama de Caso de Uso de "Controle de assinatura de contrato" | 8h | 2026-05-25 09:00 A | 2026-05-26 09:00 A |  | 100% |  |  | Analista 13 | 8h | 8h | 600 | 63.75 | 600 | 1.2.1.4.1 | Modelagem | Concluída | Analista 04 |
| 113 | 1.2.1.4.2 | Redigir EL-UCE_020 - Especificação de Caso de Uso de "Controle de assinatura de contrato" | 8h | 2026-05-26 09:00 A | 2026-05-27 09:00 A | 112 | 100% |  |  | Analista 13 | 8h | 8h | 600 | 63.75 | 600 | 1.2.1.4.2 | Modelagem | Concluída | Analista 04 |
| 114 | 1.2.1.4.3 | Elaborar EL-CD_020 - Diagrama de Classes de "Controle de assinatura de contrato" | 6h | 2026-05-27 09:00 A | 2026-05-27 16:00 A | 113 | 100% |  |  | Analista 14 | 6h | 6h | 450 | 42.5 | 450 | 1.2.1.4.3 | Modelagem | Concluída | Analista 04 |
| 115 | 1.2.1.4.4 | Elaborar EL-MER_020 - Modelo Entidade Relacionamento de "Controle de assinatura de contrato" | 6h | 2026-05-27 16:00 A | 2026-05-28 14:00 A | 114 | 100% |  |  | Analista 15 | 6h | 6h | 450 | 42.5 | 450 | 1.2.1.4.4 | Modelagem | Concluída | Analista 04 |
| 116 | 1.2.1.4.5 | Gerar EL-Script_020 - Esquema/Script de "Controle de assinatura de contrato" | 4h | 2026-05-28 14:00 A | 2026-05-29 09:00 A | 115 | 100% |  |  | Analista 14 | 4h | 4h | 300 | 21.25 | 300 | 1.2.1.4.5 | Modelagem | Concluída | Analista 04 |
| 117 | 1.2.1.4.6 | Elaborar EL-DBD_020 - Documentação de Banco de Dados de "Controle de assinatura de contrato" | 4h | 2026-05-29 09:00 A | 2026-05-29 14:00 A | 116 | 100% |  |  | Analista 15 | 4h | 4h | 300 | 21.25 | 300 | 1.2.1.4.6 | Modelagem | Concluída | Analista 04 |
| 118 | 1.2.1.5 | **"Proposta de contrato"** | 36h | 2026-05-25 09:00 A | 2026-05-29 14:00 |  | 78% | 8h | 31.5d |  | 28h | 28h | 2,100 | 255 | 2,100 | 1.2.1.5 | Modelagem | Concluída |  |
| 119 | 1.2.1.5.1 | Elaborar EL-UCD_021 - Diagrama de Caso de Uso de "Proposta de contrato" | 8h | 2026-05-25 09:00 | 2026-05-26 09:00 |  |  |  | 35d | Analista 16 |  |  |  | 63.75 |  | 1.2.1.5.1 | Modelagem | Concluída | Analista 05 |
| 120 | 1.2.1.5.2 | Redigir EL-UCE_021 - Especificação de Caso de Uso de "Proposta de contrato" | 8h | 2026-05-26 09:00 A | 2026-05-27 09:00 A | 119 | 100% |  |  | Analista 16 | 8h | 8h | 600 | 63.75 | 600 | 1.2.1.5.2 | Modelagem | Concluída | Analista 05 |
| 121 | 1.2.1.5.3 | Elaborar EL-CD_021 - Diagrama de Classes de "Proposta de contrato" | 6h | 2026-05-27 09:00 A | 2026-05-27 16:00 A | 120 | 100% |  |  | Analista 17 | 6h | 6h | 450 | 42.5 | 450 | 1.2.1.5.3 | Modelagem | Concluída | Analista 05 |
| 122 | 1.2.1.5.4 | Elaborar EL-MER_021 - Modelo Entidade Relacionamento de "Proposta de contrato" | 6h | 2026-05-27 16:00 A | 2026-05-28 14:00 A | 121 | 100% |  |  | Analista 18 | 6h | 6h | 450 | 42.5 | 450 | 1.2.1.5.4 | Modelagem | Concluída | Analista 05 |
| 123 | 1.2.1.5.5 | Gerar EL-Script_021 - Esquema/Script de "Proposta de contrato" | 4h | 2026-05-28 14:00 A | 2026-05-29 09:00 A | 122 | 100% |  |  | Analista 17 | 4h | 4h | 300 | 21.25 | 300 | 1.2.1.5.5 | Modelagem | Concluída | Analista 05 |
| 124 | 1.2.1.5.6 | Elaborar EL-DBD_021 - Documentação de Banco de Dados de "Proposta de contrato" | 4h | 2026-05-29 09:00 A | 2026-05-29 14:00 A | 123 | 100% |  |  | Analista 18 | 4h | 4h | 300 | 21.25 | 300 | 1.2.1.5.6 | Modelagem | Concluída | Analista 05 |
| 125 | 1.2.1.6 | **"Busca de profissionais"** | 36h | 2026-05-25 09:00 A | 2026-05-29 14:00 A |  | 100% |  |  |  | 36h | 36h | 2,700 | 255 | 2,700 | 1.2.1.6 | Modelagem | Concluída |  |
| 126 | 1.2.1.6.1 | Elaborar EL-UCD_022 - Diagrama de Caso de Uso de "Busca de profissionais" | 8h | 2026-05-25 09:00 A | 2026-05-26 09:00 A |  | 100% |  |  | Analista 20 | 8h | 8h | 600 | 63.75 | 600 | 1.2.1.6.1 | Modelagem | Concluída | Analista 06 |
| 127 | 1.2.1.6.2 | Redigir EL-UCE_022 - Especificação de Caso de Uso de "Busca de profissionais" | 8h | 2026-05-26 09:00 A | 2026-05-27 09:00 A | 126 | 100% |  |  | Analista 19 | 8h | 8h | 600 | 63.75 | 600 | 1.2.1.6.2 | Modelagem | Concluída | Analista 06 |
| 128 | 1.2.1.6.3 | Elaborar EL-CD_022 - Diagrama de Classes de "Busca de profissionais" | 6h | 2026-05-27 09:00 A | 2026-05-27 16:00 A | 127 | 100% |  |  | Analista 20 | 6h | 6h | 450 | 42.5 | 450 | 1.2.1.6.3 | Modelagem | Concluída | Analista 06 |
| 129 | 1.2.1.6.4 | Elaborar EL-MER_022 - Modelo Entidade Relacionamento de "Busca de profissionais" | 6h | 2026-05-27 16:00 A | 2026-05-28 14:00 A | 128 | 100% |  |  | Analista 19 | 6h | 6h | 450 | 42.5 | 450 | 1.2.1.6.4 | Modelagem | Concluída | Analista 06 |
| 130 | 1.2.1.6.5 | Gerar EL-Script_022 - Esquema/Script de "Busca de profissionais" | 4h | 2026-05-28 14:00 A | 2026-05-29 09:00 A | 129 | 100% |  |  | Analista 21 | 4h | 4h | 300 | 21.25 | 300 | 1.2.1.6.5 | Modelagem | Concluída | Analista 06 |
| 131 | 1.2.1.6.6 | Elaborar EL-DBD_022 - Documentação de Banco de Dados de "Busca de profissionais" | 4h | 2026-05-29 09:00 A | 2026-05-29 14:00 A | 130 | 100% |  |  | Analista 20 | 4h | 4h | 300 | 21.25 | 300 | 1.2.1.6.6 | Modelagem | Concluída | Analista 06 |

| ID | WBS | Task | Duration | Start | Finish | Predecessors | Complete | Resources | Work | Actual work | Cost | Baseline cost | Actual cost | Text1 | Fase | Status EVM | Responsável |
| --- | --- | --- | --- | --- | --- | --- | --- | --- | --- | --- | --- | --- | --- | --- | --- | --- | --- |
| 132 | 1.2.1.7 | **"Gerenciamento de escala de trabalho"** | 36h | 2026-05-25 09:00 A | 2026-05-29 14:00 A |  | 100% |  | 36h | 36h | 2,700 | 382.5 | 2,700 | 1.2.1.7 | Modelagem | Concluída |  |
| 133 | 1.2.1.7.1 | Elaborar EL-UCD_023 - Diagrama de Caso de Uso de "Gerenciamento de escala de trabalho" | 8h | 2026-05-25 09:00 A | 2026-05-26 09:00 A |  | 100% | Analista 21 | 8h | 8h | 600 | 63.75 | 600 | 1.2.1.7.1 | Modelagem | Concluída | Analista 07 |
| 134 | 1.2.1.7.2 | Redigir EL-UCE_023 - Especificação de Caso de Uso de "Gerenciamento de escala de trabalho" | 8h | 2026-05-26 09:00 A | 2026-05-27 09:00 A | 133 | 100% | Analista 21 | 8h | 8h | 600 | 63.75 | 600 | 1.2.1.7.2 | Modelagem | Concluída | Analista 07 |
| 135 | 1.2.1.7.3 | Elaborar EL-CD_023 - Diagrama de Classes de "Gerenciamento de escala de trabalho" | 6h | 2026-05-27 09:00 A | 2026-05-27 16:00 A | 134 | 100% | Analista 22 | 6h | 6h | 450 | 42.5 | 450 | 1.2.1.7.3 | Modelagem | Concluída | Analista 07 |
| 136 | 1.2.1.7.4 | Elaborar EL-MER_023 - Modelo Entidade Relacionamento de "Gerenciamento de escala de trabalho" | 6h | 2026-05-27 16:00 A | 2026-05-28 14:00 A | 135 | 100% | Analista 23 | 6h | 6h | 450 | 42.5 | 450 | 1.2.1.7.4 | Modelagem | Concluída | Analista 07 |
| 137 | 1.2.1.7.5 | Gerar EL-Script_023 - Esquema/Script de "Gerenciamento de escala de trabalho" | 4h | 2026-05-28 14:00 A | 2026-05-29 09:00 A | 136 | 100% | Analista 24 | 4h | 4h | 300 | 21.25 | 300 | 1.2.1.7.5 | Modelagem | Concluída | Analista 07 |
| 138 | 1.2.1.7.6 | Elaborar EL-DBD_023 - Documentação de Banco de Dados de "Gerenciamento de escala de trabalho" | 4h | 2026-05-29 09:00 A | 2026-05-29 14:00 A | 137 | 100% | Analista 25 | 4h | 4h | 300 | 148.75 | 300 | 1.2.1.7.6 | Modelagem | Concluída | Analista 07 |
| 139 | 1.2.2 | **Construção** | 40h | 2026-06-02 09:00 A | 2026-06-09 09:00 A |  | 100% |  | 280h | 280h | 22,400 | 3,350 | 22,400 | 1.2.2 | Construção | Concluída |  |
| 140 | 1.2.2.1 | **"Nível de acesso ao sistema"** | 40h | 2026-06-02 09:00 A | 2026-06-09 09:00 A | 90 | 100% |  | 40h | 40h | 3,200 | 475 | 3,200 | 1.2.2.1 | Construção | Concluída |  |
| 141 | 1.2.2.1.1 | Implementar EL-CMC_024 - Classes, Métodos e Componentes de "Nível de acesso ao sistema" | 12h | 2026-06-02 09:00 A | 2026-06-03 14:00 A |  | 100% | Dev 01 | 12h | 12h | 960 | 150 | 960 | 1.2.2.1.1 | Construção | Concluída | Dev 01 |
| 142 | 1.2.2.1.2 | Implementar EL-FUX_024 - Front-UX de "Nível de acesso ao sistema" | 8h | 2026-06-03 14:00 A | 2026-06-04 14:00 A | 141 | 100% | Dev 02 | 8h | 8h | 640 | 125 | 640 | 1.2.2.1.2 | Construção | Concluída | Dev 01 |
| 143 | 1.2.2.1.3 | Identificar EL-API_024 - APIs de "Nível de acesso ao sistema" | 8h | 2026-06-04 14:00 A | 2026-06-05 14:00 A | 142 | 100% | Dev 01 | 8h | 8h | 640 | 75 | 640 | 1.2.2.1.3 | Construção | Concluída | Dev 01 |
| 144 | 1.2.2.1.4 | Criar EL-IBD_024 - Interface do Mapeamento de Banco de Dados de "Nível de acesso ao sistema" | 8h | 2026-06-05 14:00 A | 2026-06-08 14:00 A | 143 | 100% | Dev 03 | 8h | 8h | 640 | 75 | 640 | 1.2.2.1.4 | Construção | Concluída | Dev 01 |
| 145 | 1.2.2.1.5 | Integração parcial EL-IP_024 - "Nível de acesso ao sistema" | 4h | 2026-06-08 14:00 A | 2026-06-09 09:00 A | 144 | 100% | Dev 04 | 4h | 4h | 320 | 50 | 320 | 1.2.2.1.5 | Construção | Concluída | Dev 01 |
| 146 | 1.2.2.2 | **"Cadastro de profissionais"** | 40h | 2026-06-02 09:00 A | 2026-06-09 09:00 A | 97 | 100% |  | 40h | 40h | 3,200 | 475 | 3,200 | 1.2.2.2 | Construção | Concluída |  |
| 147 | 1.2.2.2.1 | Implementar EL-CMC_025 - Classes, Métodos e Componentes de "Cadastro de profissionais" | 12h | 2026-06-02 09:00 A | 2026-06-03 14:00 A |  | 100% | Dev 05 | 12h | 12h | 960 | 150 | 960 | 1.2.2.2.1 | Construção | Concluída | Dev 02 |
| 148 | 1.2.2.2.2 | Implementar EL-FUX_025 - Front-UX de "Cadastro de profissionais" | 8h | 2026-06-03 14:00 A | 2026-06-04 14:00 A | 147 | 100% | Dev 06 | 8h | 8h | 640 | 125 | 640 | 1.2.2.2.2 | Construção | Concluída | Dev 02 |
| 149 | 1.2.2.2.3 | Identificar EL-API_025 - APIs de "Cadastro de profissionais" | 8h | 2026-06-04 14:00 A | 2026-06-05 14:00 A | 148 | 100% | Dev 07 | 8h | 8h | 640 | 75 | 640 | 1.2.2.2.3 | Construção | Concluída | Dev 02 |
| 150 | 1.2.2.2.4 | Criar EL-IBD_025 - Interface do Mapeamento de Banco de Dados de "Cadastro de profissionais" | 8h | 2026-06-05 14:00 A | 2026-06-08 14:00 A | 149 | 100% | Dev 05 | 8h | 8h | 640 | 75 | 640 | 1.2.2.2.4 | Construção | Concluída | Dev 02 |
| 151 | 1.2.2.2.5 | Integração parcial EL-IP_025 - "Cadastro de profissionais" | 4h | 2026-06-08 14:00 A | 2026-06-09 09:00 A | 150 | 100% | Dev 08 | 4h | 4h | 320 | 50 | 320 | 1.2.2.2.5 | Construção | Concluída | Dev 02 |
| 152 | 1.2.2.3 | **"Definição de taxa de serviço"** | 40h | 2026-06-02 09:00 A | 2026-06-09 09:00 A | 104 | 100% |  | 40h | 40h | 3,200 | 475 | 3,200 | 1.2.2.3 | Construção | Concluída |  |
| 153 | 1.2.2.3.1 | Implementar EL-CMC_026 - Classes, Métodos e Componentes de "Definição de taxa de serviço" | 12h | 2026-06-02 09:00 A | 2026-06-03 14:00 A |  | 100% | Dev 09 | 12h | 12h | 960 | 150 | 960 | 1.2.2.3.1 | Construção | Concluída | Dev 03 |
| 154 | 1.2.2.3.2 | Implementar EL-FUX_026 - Front-UX de "Definição de taxa de serviço" | 8h | 2026-06-03 14:00 A | 2026-06-04 14:00 A | 153 | 100% | Dev 10 | 8h | 8h | 640 | 125 | 640 | 1.2.2.3.2 | Construção | Concluída | Dev 03 |
| 155 | 1.2.2.3.3 | Identificar EL-API_026 - APIs de "Definição de taxa de serviço" | 8h | 2026-06-04 14:00 A | 2026-06-05 14:00 A | 154 | 100% | Dev 09 | 8h | 8h | 640 | 75 | 640 | 1.2.2.3.3 | Construção | Concluída | Dev 03 |
| 156 | 1.2.2.3.4 | Criar EL-IBD_026 - Interface do Mapeamento de Banco de Dados de "Definição de taxa de serviço" | 8h | 2026-06-05 14:00 A | 2026-06-08 14:00 A | 155 | 100% | Dev 11 | 8h | 8h | 640 | 75 | 640 | 1.2.2.3.4 | Construção | Concluída | Dev 03 |
| 157 | 1.2.2.3.5 | Integração parcial EL-IP_026 - "Definição de taxa de serviço" | 4h | 2026-06-08 14:00 A | 2026-06-09 09:00 A | 156 | 100% | Dev 12 | 4h | 4h | 320 | 50 | 320 | 1.2.2.3.5 | Construção | Concluída | Dev 03 |

| ID | WBS | Task | Duration | Start | Finish | Predecessors | Complete | Resources | Work | Actual work | Cost | Baseline cost | Actual cost | Text1 | Fase | Status EVM | Responsável |
| --- | --- | --- | --- | --- | --- | --- | --- | --- | --- | --- | --- | --- | --- | --- | --- | --- | --- |
| 158 | 1.2.2.4 | **"Controle de assinatura de contrato"** | 40h | 2026-06-02 09:00 A | 2026-06-09 09:00 A | 111 | 100% |  | 40h | 40h | 3,200 | 475 | 3,200 | 1.2.2.4 | Construção | Concluída |  |
| 159 | 1.2.2.4.1 | Implementar EL-CMC_027 - Classes, Métodos e Componentes de "Controle de assinatura de contrato" | 12h | 2026-06-02 09:00 A | 2026-06-03 14:00 A |  | 100% | Dev 13 | 12h | 12h | 960 | 150 | 960 | 1.2.2.4.1 | Construção | Concluída | Dev 04 |
| 160 | 1.2.2.4.2 | Implementar EL-FUX_027 - Front-UX de "Controle de assinatura de contrato" | 8h | 2026-06-03 14:00 A | 2026-06-04 14:00 A | 159 | 100% | Dev 14 | 8h | 8h | 640 | 125 | 640 | 1.2.2.4.2 | Construção | Concluída | Dev 04 |
| 161 | 1.2.2.4.3 | Identificar EL-API_027 - APIs de "Controle de assinatura de contrato" | 8h | 2026-06-04 14:00 A | 2026-06-05 14:00 A | 160 | 100% | Dev 13 | 8h | 8h | 640 | 75 | 640 | 1.2.2.4.3 | Construção | Concluída | Dev 04 |
| 162 | 1.2.2.4.4 | Criar EL-IBD_027 - Interface do Mapeamento de Banco de Dados de "Controle de assinatura de contrato" | 8h | 2026-06-05 14:00 A | 2026-06-08 14:00 A | 161 | 100% | Dev 15 | 8h | 8h | 640 | 75 | 640 | 1.2.2.4.4 | Construção | Concluída | Dev 04 |
| 163 | 1.2.2.4.5 | Integração parcial EL-IP_027 - "Controle de assinatura de contrato" | 4h | 2026-06-08 14:00 A | 2026-06-09 09:00 A | 162 | 100% | Dev 16 | 4h | 4h | 320 | 50 | 320 | 1.2.2.4.5 | Construção | Concluída | Dev 04 |
| 164 | 1.2.2.5 | **"Proposta de contrato"** | 40h | 2026-06-02 09:00 A | 2026-06-09 09:00 A | 118 | 100% |  | 40h | 40h | 3,200 | 475 | 3,200 | 1.2.2.5 | Construção | Concluída |  |
| 165 | 1.2.2.5.1 | Implementar EL-CMC_028 - Classes, Métodos e Componentes de "Proposta de contrato" | 12h | 2026-06-02 09:00 A | 2026-06-03 14:00 A |  | 100% | Dev 17 | 12h | 12h | 960 | 150 | 960 | 1.2.2.5.1 | Construção | Concluída | Dev 05 |
| 166 | 1.2.2.5.2 | Implementar EL-FUX_028 - Front-UX de "Proposta de contrato" | 8h | 2026-06-03 14:00 A | 2026-06-04 14:00 A | 165 | 100% | Dev 17 | 8h | 8h | 640 | 125 | 640 | 1.2.2.5.2 | Construção | Concluída | Dev 05 |
| 167 | 1.2.2.5.3 | Identificar EL-API_028 - APIs de "Proposta de contrato" | 8h | 2026-06-04 14:00 A | 2026-06-05 14:00 A | 166 | 100% | Dev 18 | 8h | 8h | 640 | 75 | 640 | 1.2.2.5.3 | Construção | Concluída | Dev 05 |
| 168 | 1.2.2.5.4 | Criar EL-IBD_028 - Interface do Mapeamento de Banco de Dados de "Proposta de contrato" | 8h | 2026-06-05 14:00 A | 2026-06-08 14:00 A | 167 | 100% | Dev 19 | 8h | 8h | 640 | 75 | 640 | 1.2.2.5.4 | Construção | Concluída | Dev 05 |
| 169 | 1.2.2.5.5 | Integração parcial EL-IP_028 - "Proposta de contrato" | 4h | 2026-06-08 14:00 A | 2026-06-09 09:00 A | 168 | 100% | Dev 19 | 4h | 4h | 320 | 50 | 320 | 1.2.2.5.5 | Construção | Concluída | Dev 05 |
| 170 | 1.2.2.6 | **"Busca de profissionais"** | 40h | 2026-06-02 09:00 A | 2026-06-09 09:00 A | 125 | 100% |  | 40h | 40h | 3,200 | 475 | 3,200 | 1.2.2.6 | Construção | Concluída |  |
| 171 | 1.2.2.6.1 | Implementar EL-CMC_029 - Classes, Métodos e Componentes de "Busca de profissionais" | 12h | 2026-06-02 09:00 A | 2026-06-03 14:00 A |  | 100% | Dev 20 | 12h | 12h | 960 | 150 | 960 | 1.2.2.6.1 | Construção | Concluída | Dev 06 |
| 172 | 1.2.2.6.2 | Implementar EL-FUX_029 - Front-UX de "Busca de profissionais" | 8h | 2026-06-03 14:00 A | 2026-06-04 14:00 A | 171 | 100% | Dev 21 | 8h | 8h | 640 | 125 | 640 | 1.2.2.6.2 | Construção | Concluída | Dev 06 |
| 173 | 1.2.2.6.3 | Identificar EL-API_029 - APIs de "Busca de profissionais" | 8h | 2026-06-04 14:00 A | 2026-06-05 14:00 A | 172 | 100% | Dev 22 | 8h | 8h | 640 | 75 | 640 | 1.2.2.6.3 | Construção | Concluída | Dev 06 |
| 174 | 1.2.2.6.4 | Criar EL-IBD_029 - Interface do Mapeamento de Banco de Dados de "Busca de profissionais" | 8h | 2026-06-05 14:00 A | 2026-06-08 14:00 A | 173 | 100% | Dev 21 | 8h | 8h | 640 | 75 | 640 | 1.2.2.6.4 | Construção | Concluída | Dev 06 |
| 175 | 1.2.2.6.5 | Integração parcial EL-IP_029 - "Busca de profissionais" | 4h | 2026-06-08 14:00 A | 2026-06-09 09:00 A | 174 | 100% | Dev 22 | 4h | 4h | 320 | 50 | 320 | 1.2.2.6.5 | Construção | Concluída | Dev 06 |
| 176 | 1.2.2.7 | **"Gerenciamento de escala de trabalho"** | 40h | 2026-06-02 09:00 A | 2026-06-09 09:00 A | 132 | 100% |  | 40h | 40h | 3,200 | 500 | 3,200 | 1.2.2.7 | Construção | Concluída |  |
| 177 | 1.2.2.7.1 | Implementar EL-CMC_030 - Classes, Métodos e Componentes de "Gerenciamento de escala de trabalho" | 12h | 2026-06-02 09:00 A | 2026-06-03 14:00 A |  | 100% | Dev 23 | 12h | 12h | 960 | 150 | 960 | 1.2.2.7.1 | Construção | Concluída | Dev 07 |
| 178 | 1.2.2.7.2 | Implementar EL-FUX_030 - Front-UX de "Gerenciamento de escala de trabalho" | 8h | 2026-06-03 14:00 A | 2026-06-04 14:00 A | 177 | 100% | Dev 24 | 8h | 8h | 640 | 125 | 640 | 1.2.2.7.2 | Construção | Concluída | Dev 07 |
| 179 | 1.2.2.7.3 | Identificar EL-API_030 - APIs de "Gerenciamento de escala de trabalho" | 8h | 2026-06-04 14:00 A | 2026-06-05 14:00 A | 178 | 100% | Dev 25 | 8h | 8h | 640 | 75 | 640 | 1.2.2.7.3 | Construção | Concluída | Dev 07 |
| 180 | 1.2.2.7.4 | Criar EL-IBD_030 - Interface do Mapeamento de Banco de Dados de "Gerenciamento de escala de trabalho" | 8h | 2026-06-05 14:00 A | 2026-06-08 14:00 A | 179 | 100% | Dev 23 | 8h | 8h | 640 | 75 | 640 | 1.2.2.7.4 | Construção | Concluída | Dev 07 |
| 181 | 1.2.2.7.5 | Integração parcial EL-IP_030 - "Gerenciamento de escala de trabalho" | 4h | 2026-06-08 14:00 A | 2026-06-09 09:00 A | 180 | 100% | Dev 24 | 4h | 4h | 320 | 75 | 320 | 1.2.2.7.5 | Construção | Concluída | Dev 07 |

| ID | WBS | Task | Duration | Start | Finish | Predecessors | Total slack | Free slack | Resources | Work | Cost | Baseline cost | Text1 | Fase | Status EVM | Responsável |
| --- | --- | --- | --- | --- | --- | --- | --- | --- | --- | --- | --- | --- | --- | --- | --- | --- |
| 182 | 1.2.3 | **Testes** | 2.5d | 2026-06-09 09:00 | 2026-06-11 14:00 |  |  |  |  | 140h | 7,260 | 1,280 | 1.2.3 | Testes | Concluída |  |
| 183 | 1.2.3.1 | **"Nível de acesso ao sistema"** | 20h | 2026-06-09 09:00 | 2026-06-11 14:00 |  | 22.38d | 0d |  | 20h | 660 | 180 | 1.2.3.1 | Testes | Concluída |  |
| 184 | 1.2.3.1.1 | Implementar EL-TC_031 - Casos de Teste de "Nível de acesso ao sistema" | 4h | 2026-06-09 09:00 | 2026-06-09 14:00 |  | 22.38d | 0d | QA03 | 4h |  | 60 | 1.2.3.1.1 | Testes | Não iniciada | QA 01 |
| 185 | 1.2.3.1.2 | Executar EL-T_031 - Testes de "Nível de acesso ao sistema" | 6h | 2026-06-09 14:00 | 2026-06-10 11:00 | 184 | 22.38d | 0d | QA 01 | 6h | 330 | 60 | 1.2.3.1.2 | Testes | Não iniciada | QA 01 |
| 186 | 1.2.3.1.3 | Registrar EL-LT_031 - Logs de Teste de "Nível de acesso ao sistema" | 4h | 2026-06-10 11:00 | 2026-06-10 16:00 | 185 | 22.38d | 0d | QA03 | 4h |  | 40 | 1.2.3.1.3 | Testes | Não iniciada | QA 01 |
| 187 | 1.2.3.1.4 | Executar EL-TH_031 - Testes de Homologação de "Nível de acesso ao sistema" | 6h | 2026-06-10 16:00 | 2026-06-11 14:00 | 186 | 22.38d |  | QA 01 | 6h | 330 | 20 | 1.2.3.1.4 | Testes | Não iniciada | QA 01 |
| 188 | 1.2.3.2 | **"Cadastro de profissionais"** | 20h | 2026-06-09 09:00 | 2026-06-11 14:00 |  | 22.38d | 0d |  | 20h | 1,100 | 180 | 1.2.3.2 | Testes | Concluída |  |
| 189 | 1.2.3.2.1 | Implementar EL-TC_032 - Casos de Teste de "Cadastro de profissionais" | 4h | 2026-06-09 09:00 | 2026-06-09 14:00 |  | 22.38d | 0d | QA 09 | 4h | 220 | 60 | 1.2.3.2.1 | Testes | Não iniciada | QA 02 |
| 190 | 1.2.3.2.2 | Executar EL-T_032 - Testes de "Cadastro de profissionais" | 6h | 2026-06-09 14:00 | 2026-06-10 11:00 | 189 | 22.38d | 0d | QA 08 | 6h | 330 | 60 | 1.2.3.2.2 | Testes | Não iniciada | QA 02 |
| 191 | 1.2.3.2.3 | Registrar EL-LT_032 - Logs de Teste de "Cadastro de profissionais" | 4h | 2026-06-10 11:00 | 2026-06-10 16:00 | 190 | 22.38d | 0d | QA 08 | 4h | 220 | 40 | 1.2.3.2.3 | Testes | Não iniciada | QA 02 |
| 192 | 1.2.3.2.4 | Executar EL-TH_032 - Testes de Homologação de "Cadastro de profissionais" | 6h | 2026-06-10 16:00 | 2026-06-11 14:00 | 191 | 22.38d |  | QA 09 | 6h | 330 | 20 | 1.2.3.2.4 | Testes | Não iniciada | QA 02 |
| 193 | 1.2.3.3 | **"Definição de taxa de serviço"** | 20h | 2026-06-09 09:00 | 2026-06-11 14:00 |  | 22.38d | 0d |  | 20h | 1,100 | 180 | 1.2.3.3 | Testes | Concluída |  |
| 194 | 1.2.3.3.1 | Implementar EL-TC_033 - Casos de Teste de "Definição de taxa de serviço" | 4h | 2026-06-09 09:00 | 2026-06-09 14:00 |  | 22.38d | 0d | QA 10 | 4h | 220 | 60 | 1.2.3.3.1 | Testes | Não iniciada | QA 03 |
| 195 | 1.2.3.3.2 | Executar EL-T_033 - Testes de "Definição de taxa de serviço" | 6h | 2026-06-09 14:00 | 2026-06-10 11:00 | 194 | 22.38d | 0d | QA 11 | 6h | 330 | 60 | 1.2.3.3.2 | Testes | Não iniciada | QA 03 |
| 196 | 1.2.3.3.3 | Registrar EL-LT_033 - Logs de Teste de "Definição de taxa de serviço" | 4h | 2026-06-10 11:00 | 2026-06-10 16:00 | 195 | 22.38d | 0d | QA 11 | 4h | 220 | 40 | 1.2.3.3.3 | Testes | Não iniciada | QA 03 |
| 197 | 1.2.3.3.4 | Executar EL-TH_033 - Testes de Homologação de "Definição de taxa de serviço" | 6h | 2026-06-10 16:00 | 2026-06-11 14:00 | 196 | 22.38d |  | QA 12 | 6h | 330 | 20 | 1.2.3.3.4 | Testes | Não iniciada | QA 03 |
| 198 | 1.2.3.4 | **"Controle de assinatura de contrato"** | 20h | 2026-06-09 09:00 | 2026-06-11 14:00 |  | 22.38d | 0d |  | 20h | 1,100 | 180 | 1.2.3.4 | Testes | Concluída |  |
| 199 | 1.2.3.4.1 | Implementar EL-TC_034 - Casos de Teste de "Controle de assinatura de contrato" | 4h | 2026-06-09 09:00 | 2026-06-09 14:00 |  | 22.38d | 0d | QA 13 | 4h | 220 | 60 | 1.2.3.4.1 | Testes | Não iniciada | QA 04 |
| 200 | 1.2.3.4.2 | Executar EL-T_034 - Testes de "Controle de assinatura de contrato" | 6h | 2026-06-09 14:00 | 2026-06-10 11:00 | 199 | 22.38d | 0d | QA 15 | 6h | 330 | 60 | 1.2.3.4.2 | Testes | Não iniciada | QA 04 |
| 201 | 1.2.3.4.3 | Registrar EL-LT_034 - Logs de Teste de "Controle de assinatura de contrato" | 4h | 2026-06-10 11:00 | 2026-06-10 16:00 | 200 | 22.38d | 0d | QA 14 | 4h | 220 | 40 | 1.2.3.4.3 | Testes | Não iniciada | QA 04 |
| 202 | 1.2.3.4.4 | Executar EL-TH_034 - Testes de Homologação de "Controle de assinatura de contrato" | 6h | 2026-06-10 16:00 | 2026-06-11 14:00 | 201 | 22.38d |  | QA 15 | 6h | 330 | 20 | 1.2.3.4.4 | Testes | Não iniciada | QA 04 |
| 203 | 1.2.3.5 | **"Proposta de contrato"** | 20h | 2026-06-09 09:00 | 2026-06-11 14:00 |  | 22.38d | 0d |  | 20h | 1,100 | 180 | 1.2.3.5 | Testes | Concluída |  |
| 204 | 1.2.3.5.1 | Implementar EL-TC_035 - Casos de Teste de "Proposta de contrato" | 4h | 2026-06-09 09:00 | 2026-06-09 14:00 |  | 22.38d | 0d | QA 16 | 4h | 220 | 60 | 1.2.3.5.1 | Testes | Não iniciada | QA 05 |
| 205 | 1.2.3.5.2 | Executar EL-T_035 - Testes de "Proposta de contrato" | 6h | 2026-06-09 14:00 | 2026-06-10 11:00 | 204 | 22.38d | 0d | QA 16 | 6h | 330 | 60 | 1.2.3.5.2 | Testes | Não iniciada | QA 05 |
| 206 | 1.2.3.5.3 | Registrar EL-LT_035 - Logs de Teste de "Proposta de contrato" | 4h | 2026-06-10 11:00 | 2026-06-10 16:00 | 205 | 22.38d | 0d | QA 17 | 4h | 220 | 40 | 1.2.3.5.3 | Testes | Não iniciada | QA 05 |
| 207 | 1.2.3.5.4 | Executar EL-TH_035 - Testes de Homologação de "Proposta de contrato" | 6h | 2026-06-10 16:00 | 2026-06-11 14:00 | 206 | 22.38d |  | QA 18 | 6h | 330 | 20 | 1.2.3.5.4 | Testes | Não iniciada | QA 05 |

| ID | WBS | Task | Type | Duration | Start | Finish | Predecessors | Total slack | Free slack | Constraint | Resources | Work | Cost | Baseline cost | Text1 | Fase | Status EVM | Responsável |
| --- | --- | --- | --- | --- | --- | --- | --- | --- | --- | --- | --- | --- | --- | --- | --- | --- | --- | --- |
| 208 | 1.2.3.6 | **"Busca de profissionais"** |  | 20h | 2026-06-09 09:00 | 2026-06-11 14:00 |  | 22.38d | 0d |  |  | 20h | 1,100 | 180 | 1.2.3.6 | Testes | Concluída |  |
| 209 | 1.2.3.6.1 | Implementar EL-TC_036 - Casos de Teste de "Busca de profissionais" |  | 4h | 2026-06-09 09:00 | 2026-06-09 14:00 |  | 22.38d | 0d |  | QA 19 | 4h | 220 | 60 | 1.2.3.6.1 | Testes | Não iniciada | QA 06 |
| 210 | 1.2.3.6.2 | Executar EL-T_036 - Testes de "Busca de profissionais" |  | 6h | 2026-06-09 14:00 | 2026-06-10 11:00 | 209 | 22.38d | 0d |  | QA 20 | 6h | 330 | 60 | 1.2.3.6.2 | Testes | Não iniciada | QA 06 |
| 211 | 1.2.3.6.3 | Registrar EL-LT_036 - Logs de Teste de "Busca de profissionais" |  | 4h | 2026-06-10 11:00 | 2026-06-10 16:00 | 210 | 22.38d | 0d |  | QA 20 | 4h | 220 | 40 | 1.2.3.6.3 | Testes | Não iniciada | QA 06 |
| 212 | 1.2.3.6.4 | Executar EL-TH_036 - Testes de Homologação de "Busca de profissionais" |  | 6h | 2026-06-10 16:00 | 2026-06-11 14:00 | 211 | 22.38d |  |  | QA 21 | 6h | 330 | 20 | 1.2.3.6.4 | Testes | Não iniciada | QA 06 |
| 213 | 1.2.3.7 | **"Gerenciamento de escala de trabalho"** |  | 20h | 2026-06-09 09:00 | 2026-06-11 14:00 |  | 1.25d | 0d |  |  | 20h | 1,100 | 200 | 1.2.3.7 | Testes | Concluída |  |
| 214 | 1.2.3.7.1 | Implementar EL-TC_037 - Casos de Teste de "Gerenciamento de escala de trabalho" |  | 4h | 2026-06-09 09:00 | 2026-06-09 14:00 |  | 1.25d | 0d |  | QA 22 | 4h | 220 | 60 | 1.2.3.7.1 | Testes | Não iniciada | QA 07 |
| 215 | 1.2.3.7.2 | Executar EL-T_037 - Testes de "Gerenciamento de escala de trabalho" |  | 6h | 2026-06-09 14:00 | 2026-06-10 11:00 | 214 | 1.25d | 0d |  | QA 23 | 6h | 330 | 60 | 1.2.3.7.2 | Testes | Não iniciada | QA 07 |
| 216 | 1.2.3.7.3 | Registrar EL-LT_037 - Logs de Teste de "Gerenciamento de escala de trabalho" |  | 4h | 2026-06-10 11:00 | 2026-06-10 16:00 | 215 | 1.25d | 0d |  | QA 24 | 4h | 220 | 40 | 1.2.3.7.3 | Testes | Não iniciada | QA 07 |
| 217 | 1.2.3.7.4 | Executar EL-TH_037 - Testes de Homologação de "Gerenciamento de escala de trabalho" |  | 6h | 2026-06-10 16:00 | 2026-06-11 14:00 | 216 | 1.25d |  |  | QA 25 | 6h | 330 | 40 | 1.2.3.7.4 | Testes | Não iniciada | QA 07 |
| 218 | 1.2.4 | **Implantação** |  | 16h | 2026-06-11 09:00 | 2026-06-12 18:00 |  |  |  |  |  | 7h | 329 | 1,440 | 1.2.4 | Implantação | Concluída |  |
| 219 | 1.2.4.1 | **"Nível de acesso ao sistema"** |  | 1h | 2026-06-11 14:00 | 2026-06-11 15:00 | 183 | 22.38d |  |  |  | 1h | 47 | 202.5 | 1.2.4.1 | Implantação | Concluída |  |
| 220 | 1.2.4.1.1 | Integração total EL-IT_038 - "Nível de acesso ao sistema" |  | 1h | 2026-06-11 14:00 | 2026-06-11 15:00 |  | 22.38d |  |  | Integrador | 1h | 47 | 202.5 | 1.2.4.1.1 | Implantação | Não iniciada | Integrador |
| 221 | 1.2.4.2 | **"Cadastro de profissionais"** |  | 1h | 2026-06-11 14:00 | 2026-06-11 15:00 | 188 | 22.38d |  |  |  | 1h | 47 | 202.5 | 1.2.4.2 | Implantação | Concluída |  |
| 222 | 1.2.4.2.1 | Integração total EL-IT_039 - "Cadastro de profissionais" |  | 1h | 2026-06-11 14:00 | 2026-06-11 15:00 |  | 22.38d |  |  | Integrador 02 | 1h | 47 | 202.5 | 1.2.4.2.1 | Implantação | Não iniciada | Integrador 02 |
| 223 | 1.2.4.3 | **"Definição de taxa de serviço"** |  | 1h | 2026-06-11 14:00 | 2026-06-11 15:00 | 193 | 22.38d |  |  |  | 1h | 47 | 202.5 | 1.2.4.3 | Implantação | Concluída |  |
| 224 | 1.2.4.3.1 | Integração total EL-IT_040 - "Definição de taxa de serviço" |  | 1h | 2026-06-11 14:00 | 2026-06-11 15:00 |  | 22.38d |  |  | Integrador 03 | 1h | 47 | 202.5 | 1.2.4.3.1 | Implantação | Não iniciada | Integrador 03 |
| 225 | 1.2.4.4 | **"Controle de assinatura de contrato"** |  | 1h | 2026-06-11 14:00 | 2026-06-11 15:00 | 198 | 22.38d |  |  |  | 1h | 47 | 202.5 | 1.2.4.4 | Implantação | Concluída |  |
| 226 | 1.2.4.4.1 | Integração total EL-IT_041 - "Controle de assinatura de contrato" |  | 1h | 2026-06-11 14:00 | 2026-06-11 15:00 |  | 22.38d |  |  | Integrador 04 | 1h | 47 | 202.5 | 1.2.4.4.1 | Implantação | Não iniciada | Integrador 04 |
| 227 | 1.2.4.5 | **"Proposta de contrato"** |  | 1h | 2026-06-11 14:00 | 2026-06-11 15:00 | 203 | 22.38d |  |  |  | 1h | 47 | 202.5 | 1.2.4.5 | Implantação | Concluída |  |
| 228 | 1.2.4.5.1 | Integração total EL-IT_042 - "Proposta de contrato" |  | 1h | 2026-06-11 14:00 | 2026-06-11 15:00 |  | 22.38d |  |  | Integrador | 1h | 47 | 202.5 | 1.2.4.5.1 | Implantação | Não iniciada | Integrador |
| 229 | 1.2.4.6 | **"Busca de profissionais"** |  | 1h | 2026-06-11 14:00 | 2026-06-11 15:00 | 208 | 22.38d |  |  |  | 1h | 47 | 202.5 | 1.2.4.6 | Implantação | Concluída |  |
| 230 | 1.2.4.6.1 | Integração total EL-IT_043 - "Busca de profissionais" |  | 1h | 2026-06-11 14:00 | 2026-06-11 15:00 |  | 22.38d |  |  | Integrador 02 | 1h | 47 | 202.5 | 1.2.4.6.1 | Implantação | Não iniciada | Integrador 02 |
| 231 | 1.2.4.7 | **"Gerenciamento de escala de trabalho"** |  | 1h | 2026-06-11 14:00 | 2026-06-11 15:00 | 213 | 1.25d |  |  |  | 1h | 47 | 225 | 1.2.4.7 | Implantação | Concluída |  |
| 232 | 1.2.4.7.1 | Integração total EL-IT_044 - "Gerenciamento de escala de trabalho" |  | 1h | 2026-06-11 14:00 | 2026-06-11 15:00 |  | 1.25d |  |  | Integrador 03 | 1h | 47 | 225 | 1.2.4.7.1 | Implantação | Não iniciada | Integrador 03 |
| 233 | 1.2.5 | ★ Marco da Entrega da Iteração 02 | milestone | 0h | 2026-06-12 18:00 | 2026-06-12 18:00 | 232 | 0d |  | must finish on 2026-06-12 18:00 |  |  |  |  | 1.2.5 | Marco | Concluída | Gerente de Projeto |

| ID | WBS | Task | Duration | Start | Finish | Predecessors | Total slack | Free slack | Constraint | Resources | Work | Cost | Baseline cost | Text1 | Status EVM | Fase | Responsável |
| --- | --- | --- | --- | --- | --- | --- | --- | --- | --- | --- | --- | --- | --- | --- | --- | --- | --- |
| 234 | 1.3 | **Iteração 03** | 119h | 2026-06-15 09:00 | 2026-07-03 18:00 | 233 | 5d |  | start no earlier than 2026-06-15 09:00 |  | 485h | 35,235 | 8,110 | 1.3 | Em andamento |  |  |
| 235 | 1.3.1 | **Modelagem** | 36h | 2026-06-15 09:00 | 2026-06-19 14:00 |  | 14d |  |  |  | 180h | 13,500 | 2,125 | 1.3.1 | Concluída | Modelagem |  |
| 236 | 1.3.1.1 | **"Controle de pagamento"** | 36h | 2026-06-15 09:00 | 2026-06-19 14:00 |  | 14d | 0.5d |  |  | 36h | 2,700 | 425 | 1.3.1.1 | Concluída | Modelagem |  |
| 237 | 1.3.1.1.1 | Elaborar EL-UCD_045 - Diagrama de Caso de Uso de "Controle de pagamento" | 8h | 2026-06-15 09:00 | 2026-06-16 09:00 |  | 14d | 0d |  | Analista 21 | 8h | 600 | 106.25 | 1.3.1.1.1 | Não iniciada | Modelagem | Analista 01 |
| 238 | 1.3.1.1.2 | Redigir EL-UCE_045 - Especificação de Caso de Uso de "Controle de pagamento" | 8h | 2026-06-16 09:00 | 2026-06-17 09:00 | 237 | 14d | 0d |  | Analista 21 | 8h | 600 | 106.25 | 1.3.1.1.2 | Não iniciada | Modelagem | Analista 01 |
| 239 | 1.3.1.1.3 | Elaborar EL-CD_045 - Diagrama de Classes de "Controle de pagamento" | 6h | 2026-06-17 09:00 | 2026-06-17 16:00 | 238 | 14d | 0d |  | Analista 22 | 6h | 450 | 63.75 | 1.3.1.1.3 | Não iniciada | Modelagem | Analista 01 |
| 240 | 1.3.1.1.4 | Elaborar EL-MER_045 - Modelo Entidade Relacionamento de "Controle de pagamento" | 6h | 2026-06-17 16:00 | 2026-06-18 14:00 | 239 | 14d | 0d |  | Analista 23 | 6h | 450 | 63.75 | 1.3.1.1.4 | Não iniciada | Modelagem | Analista 01 |
| 241 | 1.3.1.1.5 | Gerar EL-Script_045 - Esquema/Script de "Controle de pagamento" | 4h | 2026-06-18 14:00 | 2026-06-19 09:00 | 240 | 14d | 0d |  | Analista 24 | 4h | 300 | 42.5 | 1.3.1.1.5 | Não iniciada | Modelagem | Analista 01 |
| 242 | 1.3.1.1.6 | Elaborar EL-DBD_045 - Documentação de Banco de Dados de "Controle de pagamento" | 4h | 2026-06-19 09:00 | 2026-06-19 14:00 | 241 | 14d |  |  | Analista 25 | 4h | 300 | 42.5 | 1.3.1.1.6 | Não iniciada | Modelagem | Analista 01 |
| 243 | 1.3.1.2 | **"Configuração de Percentuais e Repasse"** | 36h | 2026-06-15 09:00 | 2026-06-19 14:00 |  | 14d | 0.5d |  |  | 36h | 2,700 | 425 | 1.3.1.2 | Concluída | Modelagem |  |
| 244 | 1.3.1.2.1 | Elaborar EL-UCD_046 - Diagrama de Caso de Uso de "Configuração de Percentuais e Repasse" | 8h | 2026-06-15 09:00 | 2026-06-16 09:00 |  | 14d | 0d |  | Analista 20 | 8h | 600 | 106.25 | 1.3.1.2.1 | Não iniciada | Modelagem | Analista 02 |
| 245 | 1.3.1.2.2 | Redigir EL-UCE_046 - Especificação de Caso de Uso de "Configuração de Percentuais e Repasse" | 8h | 2026-06-16 09:00 | 2026-06-17 09:00 | 244 | 14d | 0d |  | Analista 19 | 8h | 600 | 106.25 | 1.3.1.2.2 | Não iniciada | Modelagem | Analista 02 |
| 246 | 1.3.1.2.3 | Elaborar EL-CD_046 - Diagrama de Classes de "Configuração de Percentuais e Repasse" | 6h | 2026-06-17 09:00 | 2026-06-17 16:00 | 245 | 14d | 0d |  | Analista 20 | 6h | 450 | 63.75 | 1.3.1.2.3 | Não iniciada | Modelagem | Analista 02 |
| 247 | 1.3.1.2.4 | Elaborar EL-MER_046 - Modelo Entidade Relacionamento de "Configuração de Percentuais e Repasse" | 6h | 2026-06-17 16:00 | 2026-06-18 14:00 | 246 | 14d | 0d |  | Analista 19 | 6h | 450 | 63.75 | 1.3.1.2.4 | Não iniciada | Modelagem | Analista 02 |
| 248 | 1.3.1.2.5 | Gerar EL-Script_046 - Esquema/Script de "Configuração de Percentuais e Repasse" | 4h | 2026-06-18 14:00 | 2026-06-19 09:00 | 247 | 14d | 0d |  | Analista 21 | 4h | 300 | 42.5 | 1.3.1.2.5 | Não iniciada | Modelagem | Analista 02 |
| 249 | 1.3.1.2.6 | Elaborar EL-DBD_046 - Documentação de Banco de Dados de "Configuração de Percentuais e Repasse" | 4h | 2026-06-19 09:00 | 2026-06-19 14:00 | 248 | 14d |  |  | Analista 20 | 4h | 300 | 42.5 | 1.3.1.2.6 | Não iniciada | Modelagem | Analista 02 |
| 250 | 1.3.1.3 | **"Gestão de painel jurídico"** | 36h | 2026-06-15 09:00 | 2026-06-19 14:00 |  | 14d | 0.5d |  |  | 36h | 2,700 | 425 | 1.3.1.3 | Concluída | Modelagem |  |
| 251 | 1.3.1.3.1 | Elaborar EL-UCD_047 - Diagrama de Caso de Uso de "Gestão de painel jurídico" | 8h | 2026-06-15 09:00 | 2026-06-16 09:00 |  | 14d | 0d |  | Analista 16 | 8h | 600 | 106.25 | 1.3.1.3.1 | Não iniciada | Modelagem | Analista 03 |
| 252 | 1.3.1.3.2 | Redigir EL-UCE_047 - Especificação de Caso de Uso de "Gestão de painel jurídico" | 8h | 2026-06-16 09:00 | 2026-06-17 09:00 | 251 | 14d | 0d |  | Analista 16 | 8h | 600 | 106.25 | 1.3.1.3.2 | Não iniciada | Modelagem | Analista 03 |
| 253 | 1.3.1.3.3 | Elaborar EL-CD_047 - Diagrama de Classes de "Gestão de painel jurídico" | 6h | 2026-06-17 09:00 | 2026-06-17 16:00 | 252 | 14d | 0d |  | Analista 17 | 6h | 450 | 63.75 | 1.3.1.3.3 | Não iniciada | Modelagem | Analista 03 |
| 254 | 1.3.1.3.4 | Elaborar EL-MER_047 - Modelo Entidade Relacionamento de "Gestão de painel jurídico" | 6h | 2026-06-17 16:00 | 2026-06-18 14:00 | 253 | 14d | 0d |  | Analista 18 | 6h | 450 | 63.75 | 1.3.1.3.4 | Não iniciada | Modelagem | Analista 03 |
| 255 | 1.3.1.3.5 | Gerar EL-Script_047 - Esquema/Script de "Gestão de painel jurídico" | 4h | 2026-06-18 14:00 | 2026-06-19 09:00 | 254 | 14d | 0d |  | Analista 17 | 4h | 300 | 42.5 | 1.3.1.3.5 | Não iniciada | Modelagem | Analista 03 |
| 256 | 1.3.1.3.6 | Elaborar EL-DBD_047 - Documentação de Banco de Dados de "Gestão de painel jurídico" | 4h | 2026-06-19 09:00 | 2026-06-19 14:00 | 255 | 14d |  |  | Analista 18 | 4h | 300 | 42.5 | 1.3.1.3.6 | Não iniciada | Modelagem | Analista 03 |
| 257 | 1.3.1.4 | **"Cadastro do documento do profissional"** | 36h | 2026-06-15 09:00 | 2026-06-19 14:00 |  | 14d | 0.5d |  |  | 36h | 2,700 | 425 | 1.3.1.4 | Concluída | Modelagem |  |
| 258 | 1.3.1.4.1 | Elaborar EL-UCD_048 - Diagrama de Caso de Uso de "Cadastro do documento do profissional" | 8h | 2026-06-15 09:00 | 2026-06-16 09:00 |  | 14d | 0d |  | Analista 13 | 8h | 600 | 106.25 | 1.3.1.4.1 | Não iniciada | Modelagem | Analista 04 |
| 259 | 1.3.1.4.2 | Redigir EL-UCE_048 - Especificação de Caso de Uso de "Cadastro do documento do profissional" | 8h | 2026-06-16 09:00 | 2026-06-17 09:00 | 258 | 14d | 0d |  | Analista 13 | 8h | 600 | 106.25 | 1.3.1.4.2 | Não iniciada | Modelagem | Analista 04 |
| 260 | 1.3.1.4.3 | Elaborar EL-CD_048 - Diagrama de Classes de "Cadastro do documento do profissional" | 6h | 2026-06-17 09:00 | 2026-06-17 16:00 | 259 | 14d | 0d |  | Analista 14 | 6h | 450 | 63.75 | 1.3.1.4.3 | Não iniciada | Modelagem | Analista 04 |
| 261 | 1.3.1.4.4 | Elaborar EL-MER_048 - Modelo Entidade Relacionamento de "Cadastro do documento do profissional" | 6h | 2026-06-17 16:00 | 2026-06-18 14:00 | 260 | 14d | 0d |  | Analista 15 | 6h | 450 | 63.75 | 1.3.1.4.4 | Não iniciada | Modelagem | Analista 04 |
| 262 | 1.3.1.4.5 | Gerar EL-Script_048 - Esquema/Script de "Cadastro do documento do profissional" | 4h | 2026-06-18 14:00 | 2026-06-19 09:00 | 261 | 14d | 0d |  | Analista 14 | 4h | 300 | 42.5 | 1.3.1.4.5 | Não iniciada | Modelagem | Analista 04 |
| 263 | 1.3.1.4.6 | Elaborar EL-DBD_048 - Documentação de Banco de Dados de "Cadastro do documento do profissional" | 4h | 2026-06-19 09:00 | 2026-06-19 14:00 | 262 | 14d |  |  | Analista 15 | 4h | 300 | 42.5 | 1.3.1.4.6 | Não iniciada | Modelagem | Analista 04 |

| ID | WBS | Task | Duration | Start | Finish | Predecessors | Total slack | Free slack | Resources | Work | Cost | Baseline cost | Text1 | Fase | Status EVM | Responsável |
| --- | --- | --- | --- | --- | --- | --- | --- | --- | --- | --- | --- | --- | --- | --- | --- | --- |
| 264 | 1.3.1.5 | **"Gestão de relatórios financeiros"** | 36h | 2026-06-15 09:00 | 2026-06-19 14:00 |  | 16.5d |  |  | 36h | 2,700 | 425 | 1.3.1.5 | Modelagem | Concluída |  |
| 265 | 1.3.1.5.1 | Elaborar EL-UCD_049 - Diagrama de Caso de Uso de "Gestão de relatórios financeiros" | 8h | 2026-06-15 09:00 | 2026-06-16 09:00 |  | 16.5d | 0d | Analista 09 | 8h | 600 | 106.25 | 1.3.1.5.1 | Modelagem | Não iniciada | Analista 05 |
| 266 | 1.3.1.5.2 | Redigir EL-UCE_049 - Especificação de Caso de Uso de "Gestão de relatórios financeiros" | 8h | 2026-06-16 09:00 | 2026-06-17 09:00 | 265 | 16.5d | 0d | Analista 10 | 8h | 600 | 106.25 | 1.3.1.5.2 | Modelagem | Não iniciada | Analista 05 |
| 267 | 1.3.1.5.3 | Elaborar EL-CD_049 - Diagrama de Classes de "Gestão de relatórios financeiros" | 6h | 2026-06-17 09:00 | 2026-06-17 16:00 | 266 | 16.5d | 0d | Analista 09 | 6h | 450 | 63.75 | 1.3.1.5.3 | Modelagem | Não iniciada | Analista 05 |
| 268 | 1.3.1.5.4 | Elaborar EL-MER_049 - Modelo Entidade Relacionamento de "Gestão de relatórios financeiros" | 6h | 2026-06-17 16:00 | 2026-06-18 14:00 | 267 | 16.5d | 0d | Analista 11 | 6h | 450 | 63.75 | 1.3.1.5.4 | Modelagem | Não iniciada | Analista 05 |
| 269 | 1.3.1.5.5 | Gerar EL-Script_049 - Esquema/Script de "Gestão de relatórios financeiros" | 4h | 2026-06-18 14:00 | 2026-06-19 09:00 | 268 | 16.5d | 0d | Analista 12 | 4h | 300 | 42.5 | 1.3.1.5.5 | Modelagem | Não iniciada | Analista 05 |
| 270 | 1.3.1.5.6 | Elaborar EL-DBD_049 - Documentação de Banco de Dados de "Gestão de relatórios financeiros" | 4h | 2026-06-19 09:00 | 2026-06-19 14:00 | 269 | 16.5d |  | Analista 11 | 4h | 300 | 42.5 | 1.3.1.5.6 | Modelagem | Não iniciada | Analista 05 |
| 271 | 1.3.2 | **Construção** | 40h | 2026-06-15 09:00 | 2026-06-22 09:00 |  | 13.5d |  |  | 200h | 16,000 | 2,625 | 1.3.2 | Construção | Concluída |  |
| 272 | 1.3.2.1 | **"Controle de pagamento"** | 40h | 2026-06-15 09:00 | 2026-06-22 09:00 |  | 16d |  |  | 40h | 3,200 | 525 | 1.3.2.1 | Construção | Concluída |  |
| 273 | 1.3.2.1.1 | Implementar EL-CMC_050 - Classes, Métodos e Componentes de "Controle de pagamento" | 12h | 2026-06-15 09:00 | 2026-06-16 14:00 |  | 16d | 0d | Dev 23 | 12h | 960 | 175 | 1.3.2.1.1 | Construção | Não iniciada | Dev 01 |
| 274 | 1.3.2.1.2 | Implementar EL-FUX_050 - Front-UX de "Controle de pagamento" | 8h | 2026-06-16 14:00 | 2026-06-17 14:00 | 273 | 16d | 0d | Dev 24 | 8h | 640 | 150 | 1.3.2.1.2 | Construção | Não iniciada | Dev 01 |
| 275 | 1.3.2.1.3 | Identificar EL-API_050 - APIs de "Controle de pagamento" | 8h | 2026-06-17 14:00 | 2026-06-18 14:00 | 274 | 16d | 0d | Dev 25 | 8h | 640 | 75 | 1.3.2.1.3 | Construção | Não iniciada | Dev 01 |
| 276 | 1.3.2.1.4 | Criar EL-IBD_050 - Interface do Mapeamento de Banco de Dados de "Controle de pagamento" | 8h | 2026-06-18 14:00 | 2026-06-19 14:00 | 275 | 16d | 0d | Dev 23 | 8h | 640 | 75 | 1.3.2.1.4 | Construção | Não iniciada | Dev 01 |
| 277 | 1.3.2.1.5 | Integração parcial EL-IP_050 - "Controle de pagamento" | 4h | 2026-06-19 14:00 | 2026-06-22 09:00 | 276 | 16d |  | Dev 24 | 4h | 320 | 50 | 1.3.2.1.5 | Construção | Não iniciada | Dev 01 |
| 278 | 1.3.2.2 | **"Configuração de Percentuais e Repasse"** | 40h | 2026-06-15 09:00 | 2026-06-22 09:00 |  | 16d |  |  | 40h | 3,200 | 525 | 1.3.2.2 | Construção | Concluída |  |
| 279 | 1.3.2.2.1 | Implementar EL-CMC_051 - Classes, Métodos e Componentes de "Configuração de Percentuais e Repasse" | 12h | 2026-06-15 09:00 | 2026-06-16 14:00 |  | 16d | 0d | Dev 20 | 12h | 960 | 175 | 1.3.2.2.1 | Construção | Não iniciada | Dev 02 |
| 280 | 1.3.2.2.2 | Implementar EL-FUX_051 - Front-UX de "Configuração de Percentuais e Repasse" | 8h | 2026-06-16 14:00 | 2026-06-17 14:00 | 279 | 16d | 0d | Dev 21 | 8h | 640 | 150 | 1.3.2.2.2 | Construção | Não iniciada | Dev 02 |
| 281 | 1.3.2.2.3 | Identificar EL-API_051 - APIs de "Configuração de Percentuais e Repasse" | 8h | 2026-06-17 14:00 | 2026-06-18 14:00 | 280 | 16d | 0d | Dev 22 | 8h | 640 | 75 | 1.3.2.2.3 | Construção | Não iniciada | Dev 02 |
| 282 | 1.3.2.2.4 | Criar EL-IBD_051 - Interface do Mapeamento de Banco de Dados de "Configuração de Percentuais e Repasse" | 8h | 2026-06-18 14:00 | 2026-06-19 14:00 | 281 | 16d | 0d | Dev 21 | 8h | 640 | 75 | 1.3.2.2.4 | Construção | Não iniciada | Dev 02 |
| 283 | 1.3.2.2.5 | Integração parcial EL-IP_051 - "Configuração de Percentuais e Repasse" | 4h | 2026-06-19 14:00 | 2026-06-22 09:00 | 282 | 16d |  | Dev 22 | 4h | 320 | 50 | 1.3.2.2.5 | Construção | Não iniciada | Dev 02 |
| 284 | 1.3.2.3 | **"Gestão de painel jurídico"** | 40h | 2026-06-15 09:00 | 2026-06-22 09:00 |  | 16d |  |  | 40h | 3,200 | 525 | 1.3.2.3 | Construção | Concluída |  |
| 285 | 1.3.2.3.1 | Implementar EL-CMC_052 - Classes, Métodos e Componentes de "Gestão de painel jurídico" | 12h | 2026-06-15 09:00 | 2026-06-16 14:00 |  | 16d | 0d | Dev 17 | 12h | 960 | 175 | 1.3.2.3.1 | Construção | Não iniciada | Dev 03 |
| 286 | 1.3.2.3.2 | Implementar EL-FUX_052 - Front-UX de "Gestão de painel jurídico" | 8h | 2026-06-16 14:00 | 2026-06-17 14:00 | 285 | 16d | 0d | Dev 17 | 8h | 640 | 150 | 1.3.2.3.2 | Construção | Não iniciada | Dev 03 |
| 287 | 1.3.2.3.3 | Identificar EL-API_052 - APIs de "Gestão de painel jurídico" | 8h | 2026-06-17 14:00 | 2026-06-18 14:00 | 286 | 16d | 0d | Dev 18 | 8h | 640 | 75 | 1.3.2.3.3 | Construção | Não iniciada | Dev 03 |
| 288 | 1.3.2.3.4 | Criar EL-IBD_052 - Interface do Mapeamento de Banco de Dados de "Gestão de painel jurídico" | 8h | 2026-06-18 14:00 | 2026-06-19 14:00 | 287 | 16d | 0d | Dev 19 | 8h | 640 | 75 | 1.3.2.3.4 | Construção | Não iniciada | Dev 03 |
| 289 | 1.3.2.3.5 | Integração parcial EL-IP_052 - "Gestão de painel jurídico" | 4h | 2026-06-19 14:00 | 2026-06-22 09:00 | 288 | 16d |  | Dev 19 | 4h | 320 | 50 | 1.3.2.3.5 | Construção | Não iniciada | Dev 03 |

| ID | WBS | Task | Duration | Start | Finish | Predecessors | Total slack | Free slack | Resources | Work | Cost | Baseline cost | Text1 | Fase | Status EVM | Responsável |
| --- | --- | --- | --- | --- | --- | --- | --- | --- | --- | --- | --- | --- | --- | --- | --- | --- |
| 290 | 1.3.2.4 | **"Cadastro do documento do profissional"** | 40h | 2026-06-15 09:00 | 2026-06-22 09:00 |  | 16d |  |  | 40h | 3,200 | 525 | 1.3.2.4 | Construção | Concluída |  |
| 291 | 1.3.2.4.1 | Implementar EL-CMC_053 - Classes, Métodos e Componentes de "Cadastro do documento do profissional" | 12h | 2026-06-15 09:00 | 2026-06-16 14:00 |  | 16d | 0d | Dev 13 | 12h | 960 | 175 | 1.3.2.4.1 | Construção | Não iniciada | Dev 04 |
| 292 | 1.3.2.4.2 | Implementar EL-FUX_053 - Front-UX de "Cadastro do documento do profissional" | 8h | 2026-06-16 14:00 | 2026-06-17 14:00 | 291 | 16d | 0d | Dev 14 | 8h | 640 | 150 | 1.3.2.4.2 | Construção | Não iniciada | Dev 04 |
| 293 | 1.3.2.4.3 | Identificar EL-API_053 - APIs de "Cadastro do documento do profissional" | 8h | 2026-06-17 14:00 | 2026-06-18 14:00 | 292 | 16d | 0d | Dev 13 | 8h | 640 | 75 | 1.3.2.4.3 | Construção | Não iniciada | Dev 04 |
| 294 | 1.3.2.4.4 | Criar EL-IBD_053 - Interface do Mapeamento de Banco de Dados de "Cadastro do documento do profissional" | 8h | 2026-06-18 14:00 | 2026-06-19 14:00 | 293 | 16d | 0d | Dev 15 | 8h | 640 | 75 | 1.3.2.4.4 | Construção | Não iniciada | Dev 04 |
| 295 | 1.3.2.4.5 | Integração parcial EL-IP_053 - "Cadastro do documento do profissional" | 4h | 2026-06-19 14:00 | 2026-06-22 09:00 | 294 | 16d |  | Dev 16 | 4h | 320 | 50 | 1.3.2.4.5 | Construção | Não iniciada | Dev 04 |
| 296 | 1.3.2.5 | **"Gestão de relatórios financeiros"** | 40h | 2026-06-15 09:00 | 2026-06-22 09:00 |  | 13.5d | 0d |  | 40h | 3,200 | 525 | 1.3.2.5 | Construção | Concluída |  |
| 297 | 1.3.2.5.1 | Implementar EL-CMC_054 - Classes, Métodos e Componentes de "Gestão de relatórios financeiros" | 12h | 2026-06-15 09:00 | 2026-06-16 14:00 |  | 13.5d | 0d | Dev 09 | 12h | 960 | 175 | 1.3.2.5.1 | Construção | Não iniciada | Dev 05 |
| 298 | 1.3.2.5.2 | Implementar EL-FUX_054 - Front-UX de "Gestão de relatórios financeiros" | 8h | 2026-06-16 14:00 | 2026-06-17 14:00 | 297 | 13.5d | 0d | Dev 10 | 8h | 640 | 150 | 1.3.2.5.2 | Construção | Não iniciada | Dev 05 |
| 299 | 1.3.2.5.3 | Identificar EL-API_054 - APIs de "Gestão de relatórios financeiros" | 8h | 2026-06-17 14:00 | 2026-06-18 14:00 | 298 | 13.5d | 0d | Dev 09 | 8h | 640 | 75 | 1.3.2.5.3 | Construção | Não iniciada | Dev 05 |
| 300 | 1.3.2.5.4 | Criar EL-IBD_054 - Interface do Mapeamento de Banco de Dados de "Gestão de relatórios financeiros" | 8h | 2026-06-18 14:00 | 2026-06-19 14:00 | 299 | 13.5d | 0d | Dev 11 | 8h | 640 | 75 | 1.3.2.5.4 | Construção | Não iniciada | Dev 05 |
| 301 | 1.3.2.5.5 | Integração parcial EL-IP_054 - "Gestão de relatórios financeiros" | 4h | 2026-06-19 14:00 | 2026-06-22 09:00 | 300 | 13.5d |  | Dev 12 | 4h | 320 | 50 | 1.3.2.5.5 | Construção | Não iniciada | Dev 05 |
| 302 | 1.3.3 | **Testes** | 20h | 2026-06-22 09:00 | 2026-06-24 14:00 |  |  |  |  | 100h | 5,500 | 1,920 | 1.3.3 | Testes | Em andamento |  |
| 303 | 1.3.3.1 | **"Controle de pagamento"** | 20h | 2026-06-22 09:00 | 2026-06-24 14:00 | 236 | 13.5d |  |  | 20h | 1,100 | 380 | 1.3.3.1 | Testes | Concluída |  |
| 304 | 1.3.3.1.1 | Implementar EL-TC_055 - Casos de Teste de "Controle de pagamento" | 4h | 2026-06-22 09:00 | 2026-06-22 14:00 |  | 13.5d | 0d | QA 22 | 4h | 220 | 120 | 1.3.3.1.1 | Testes | Não iniciada | QA 01 |
| 305 | 1.3.3.1.2 | Executar EL-T_055 - Testes de "Controle de pagamento" | 6h | 2026-06-22 14:00 | 2026-06-23 11:00 | 304 | 13.5d | 0d | QA 23 | 6h | 330 | 120 | 1.3.3.1.2 | Testes | Não iniciada | QA 01 |
| 306 | 1.3.3.1.3 | Registrar EL-LT_055 - Logs de Teste de "Controle de pagamento" | 4h | 2026-06-23 11:00 | 2026-06-23 16:00 | 305 | 13.5d | 0d | QA 24 | 4h | 220 | 80 | 1.3.3.1.3 | Testes | Não iniciada | QA 01 |
| 307 | 1.3.3.1.4 | Executar EL-TH_055 - Testes de Homologação de "Controle de pagamento" | 6h | 2026-06-23 16:00 | 2026-06-24 14:00 | 306 | 13.5d |  | QA 25 | 6h | 330 | 60 | 1.3.3.1.4 | Testes | Não iniciada | QA 01 |
| 308 | 1.3.3.2 | **"Configuração de Percentuais e Repasse"** | 20h | 2026-06-22 09:00 | 2026-06-24 14:00 | 243 | 13.5d |  |  | 20h | 1,100 | 380 | 1.3.3.2 | Testes | Em andamento |  |
| 309 | 1.3.3.2.1 | Implementar EL-TC_056 - Casos de Teste de "Configuração de Percentuais e Repasse" | 4h | 2026-06-22 09:00 | 2026-06-22 14:00 |  | 13.5d | 0d | QA 19 | 4h | 220 | 120 | 1.3.3.2.1 | Testes | Não iniciada | QA 02 |
| 310 | 1.3.3.2.2 | Executar EL-T_056 - Testes de "Configuração de Percentuais e Repasse" | 6h | 2026-06-22 14:00 | 2026-06-23 11:00 | 309 | 13.5d | 0d | QA 20 | 6h | 330 | 120 | 1.3.3.2.2 | Testes | Não iniciada | QA 02 |
| 311 | 1.3.3.2.3 | Registrar EL-LT_056 - Logs de Teste de "Configuração de Percentuais e Repasse" | 4h | 2026-06-23 11:00 | 2026-06-23 16:00 | 310 | 13.5d | 0d | QA 20 | 4h | 220 | 80 | 1.3.3.2.3 | Testes | Não iniciada | QA 02 |
| 312 | 1.3.3.2.4 | Executar EL-TH_056 - Testes de Homologação de "Configuração de Percentuais e Repasse" | 6h | 2026-06-23 16:00 | 2026-06-24 14:00 | 311 | 13.5d |  | QA 21 | 6h | 330 | 60 | 1.3.3.2.4 | Testes | Não iniciada | QA 02 |
| 313 | 1.3.3.3 | **"Gestão de painel jurídico"** | 20h | 2026-06-22 09:00 | 2026-06-24 14:00 | 250 | 13.5d |  |  | 20h | 1,100 | 380 | 1.3.3.3 | Testes | Não iniciada |  |
| 314 | 1.3.3.3.1 | Implementar EL-TC_057 - Casos de Teste de "Gestão de painel jurídico" | 4h | 2026-06-22 09:00 | 2026-06-22 14:00 |  | 13.5d | 0d | QA 16 | 4h | 220 | 120 | 1.3.3.3.1 | Testes | Não iniciada | QA 03 |
| 315 | 1.3.3.3.2 | Executar EL-T_057 - Testes de "Gestão de painel jurídico" | 6h | 2026-06-22 14:00 | 2026-06-23 11:00 | 314 | 13.5d | 0d | QA 16 | 6h | 330 | 120 | 1.3.3.3.2 | Testes | Não iniciada | QA 03 |
| 316 | 1.3.3.3.3 | Registrar EL-LT_057 - Logs de Teste de "Gestão de painel jurídico" | 4h | 2026-06-23 11:00 | 2026-06-23 16:00 | 315 | 13.5d | 0d | QA 17 | 4h | 220 | 80 | 1.3.3.3.3 | Testes | Não iniciada | QA 03 |
| 317 | 1.3.3.3.4 | Executar EL-TH_057 - Testes de Homologação de "Gestão de painel jurídico" | 6h | 2026-06-23 16:00 | 2026-06-24 14:00 | 316 | 13.5d |  | QA 18 | 6h | 330 | 60 | 1.3.3.3.4 | Testes | Não iniciada | QA 03 |

| ID | WBS | Task | Type | Duration | Start | Finish | Predecessors | Total slack | Free slack | Constraint | Resources | Work | Cost | Baseline cost | Text1 | Fase | Status EVM | Responsável |
| --- | --- | --- | --- | --- | --- | --- | --- | --- | --- | --- | --- | --- | --- | --- | --- | --- | --- | --- |
| 318 | 1.3.3.4 | **"Cadastro do documento do profissional"** |  | 20h | 2026-06-22 09:00 | 2026-06-24 14:00 | 257 | 13.5d |  |  |  | 20h | 1,100 | 380 | 1.3.3.4 | Testes | Não iniciada |  |
| 319 | 1.3.3.4.1 | Implementar EL-TC_058 - Casos de Teste de "Cadastro do documento do profissional" |  | 4h | 2026-06-22 09:00 | 2026-06-22 14:00 |  | 13.5d | 0d |  | QA 13 | 4h | 220 | 120 | 1.3.3.4.1 | Testes | Não iniciada | QA 04 |
| 320 | 1.3.3.4.2 | Executar EL-T_058 - Testes de "Cadastro do documento do profissional" |  | 6h | 2026-06-22 14:00 | 2026-06-23 11:00 | 319 | 13.5d | 0d |  | QA 15 | 6h | 330 | 120 | 1.3.3.4.2 | Testes | Não iniciada | QA 04 |
| 321 | 1.3.3.4.3 | Registrar EL-LT_058 - Logs de Teste de "Cadastro do documento do profissional" |  | 4h | 2026-06-23 11:00 | 2026-06-23 16:00 | 320 | 13.5d | 0d |  | QA 14 | 4h | 220 | 80 | 1.3.3.4.3 | Testes | Não iniciada | QA 04 |
| 322 | 1.3.3.4.4 | Executar EL-TH_058 - Testes de Homologação de "Cadastro do documento do profissional" |  | 6h | 2026-06-23 16:00 | 2026-06-24 14:00 | 321 | 13.5d |  |  | QA 15 | 6h | 330 | 60 | 1.3.3.4.4 | Testes | Não iniciada | QA 04 |
| 323 | 1.3.3.5 | **"Gestão de relatórios financeiros"** |  | 20h | 2026-06-22 09:00 | 2026-06-24 14:00 | 296 | 13.5d |  |  |  | 20h | 1,100 | 400 | 1.3.3.5 | Testes | Não iniciada |  |
| 324 | 1.3.3.5.1 | Implementar EL-TC_059 - Casos de Teste de "Gestão de relatórios financeiros" |  | 4h | 2026-06-22 09:00 | 2026-06-22 14:00 |  | 13.5d | 0d |  | QA 10 | 4h | 220 | 120 | 1.3.3.5.1 | Testes | Não iniciada | QA 05 |
| 325 | 1.3.3.5.2 | Executar EL-T_059 - Testes de "Gestão de relatórios financeiros" |  | 6h | 2026-06-22 14:00 | 2026-06-23 11:00 | 324 | 13.5d | 0d |  | QA 11 | 6h | 330 | 120 | 1.3.3.5.2 | Testes | Não iniciada | QA 05 |
| 326 | 1.3.3.5.3 | Registrar EL-LT_059 - Logs de Teste de "Gestão de relatórios financeiros" |  | 4h | 2026-06-23 11:00 | 2026-06-23 16:00 | 325 | 13.5d | 0d |  | QA 11 | 4h | 220 | 80 | 1.3.3.5.3 | Testes | Não iniciada | QA 05 |
| 327 | 1.3.3.5.4 | Executar EL-TH_059 - Testes de Homologação de "Gestão de relatórios financeiros" |  | 6h | 2026-06-23 16:00 | 2026-06-24 14:00 | 326 | 13.5d |  |  | QA 12 | 6h | 330 | 80 | 1.3.3.5.4 | Testes | Não iniciada | QA 05 |
| 328 | 1.3.4 | **Implantação** |  | 4h | 2026-06-24 09:00 | 2026-06-24 14:00 |  |  |  |  |  | 5h | 235 | 1,440 | 1.3.4 | Implantação | Não iniciada |  |
| 329 | 1.3.4.1 | **"Controle de pagamento"** |  | 1h | 2026-06-24 09:00 | 2026-06-24 10:00 |  | 13.88d |  |  |  | 1h | 47 | 292.5 | 1.3.4.1 | Implantação | Não iniciada |  |
| 330 | 1.3.4.1.1 | Integração total EL-IT_060 - "Controle de pagamento" |  | 1h | 2026-06-24 09:00 | 2026-06-24 10:00 |  | 13.88d |  |  | Integrador | 1h | 47 | 292.5 | 1.3.4.1.1 | Implantação | Não iniciada | Integrador |
| 331 | 1.3.4.2 | **"Configuração de Percentuais e Repasse"** |  | 1h | 2026-06-24 09:00 | 2026-06-24 10:00 |  | 13.88d |  |  |  | 1h | 47 | 292.5 | 1.3.4.2 | Implantação | Não iniciada |  |
| 332 | 1.3.4.2.1 | Integração total EL-IT_061 - "Configuração de Percentuais e Repasse" |  | 1h | 2026-06-24 09:00 | 2026-06-24 10:00 |  | 13.88d |  |  | Integrador 02 | 1h | 47 | 292.5 | 1.3.4.2.1 | Implantação | Não iniciada | Integrador 02 |
| 333 | 1.3.4.3 | **"Gestão de painel jurídico"** |  | 1h | 2026-06-24 09:00 | 2026-06-24 10:00 |  | 13.88d |  |  |  | 1h | 47 | 292.5 | 1.3.4.3 | Implantação | Não iniciada |  |
| 334 | 1.3.4.3.1 | Integração total EL-IT_062 - "Gestão de painel jurídico" |  | 1h | 2026-06-24 09:00 | 2026-06-24 10:00 |  | 13.88d |  |  | Integrador 03 | 1h | 47 | 292.5 | 1.3.4.3.1 | Implantação | Não iniciada | Integrador 03 |
| 335 | 1.3.4.4 | **"Cadastro do documento do profissional"** |  | 1h | 2026-06-24 09:00 | 2026-06-24 10:00 |  | 13.88d |  |  |  | 1h | 47 | 292.5 | 1.3.4.4 | Implantação | Não iniciada |  |
| 336 | 1.3.4.4.1 | Integração total EL-IT_063 - "Cadastro do documento do profissional" |  | 1h | 2026-06-24 09:00 | 2026-06-24 10:00 |  | 13.88d |  |  | Integrador 04 | 1h | 47 | 292.5 | 1.3.4.4.1 | Implantação | Não iniciada | Integrador 04 |
| 337 | 1.3.4.5 | **"Gestão de relatórios financeiros"** |  | 1h | 2026-06-24 09:00 | 2026-06-24 10:00 |  | 7.75d |  |  |  | 1h | 47 | 270 | 1.3.4.5 | Implantação | Não iniciada |  |
| 338 | 1.3.4.5.1 | Integração total EL-IT_064 - "Gestão de relatórios financeiros" |  | 1h | 2026-06-24 09:00 | 2026-06-24 10:00 |  | 7.75d |  |  | Integrador | 1h | 47 | 270 | 1.3.4.5.1 | Implantação | Não iniciada | Integrador |
| 339 | 1.3.5 | ★ Marco da Entrega da Iteração 03 | milestone | 0h | 2026-07-03 18:00 | 2026-07-03 18:00 | 338 | 0d |  | must finish on 2026-07-03 18:00 |  |  |  |  | 1.3.5 | Marco | Não iniciada | Gerente de Projeto |
| 340 | 1.4 | **Encerramento / Revisão Final** |  | 48h | 2026-07-06 09:00 | 2026-07-14 09:00 | 339 | 0d |  | start no earlier than 2026-07-06 09:00 |  | 48h | 5,320 |  | 1.4 |  |  |  |
| 341 | 1.4.1 | Revisão final do cronograma e entregáveis |  | 8h | 2026-07-06 09:00 | 2026-07-07 09:00 | 339 | 0d |  |  | Gerente de Projeto | 8h | 2,400 |  | 1.4.1 | Encerramento | Não iniciada | Gerente de Projeto |
| 342 | 1.4.2 | Consolidação da documentação final |  | 16h | 2026-07-07 09:00 | 2026-07-09 09:00 | 341 | 0d |  |  | Analista 06 | 16h | 1,200 |  | 1.4.2 | Encerramento | Não iniciada | Analista 06 |
| 343 | 1.4.3 | Correções finais e estabilização do sistema |  | 16h | 2026-07-09 09:00 | 2026-07-13 09:00 | 342 | 0d |  |  | Dev 06 | 16h | 1,280 |  | 1.4.3 | Encerramento | Não iniciada | Dev 06 |
| 344 | 1.4.4 | Validação final e aceite do projeto |  | 8h | 2026-07-13 09:00 | 2026-07-14 09:00 | 343 | 0d |  |  | QA 05 | 8h | 440 |  | 1.4.4 | Encerramento | Não iniciada | QA 05 |
| 345 | 1.4.5 | Marco de encerramento do projeto | milestone | 0h | 2026-07-14 09:00 | 2026-07-14 09:00 | 344 | 0d |  |  |  |  |  |  | 1.4.5 | Encerramento | Não iniciada | Gerente de Projeto |
